# AgroRuta_Plan_Proyecto.xml

Schedule from MS Project XML, 2026-08-03 to 2026-12-10.

## Calendars

- Estandar[Imported][Imported]: Mon-Fri 08:00-12:00, 13:00-17:00; Sat-Sun off.

## Resources

| Resource | Rate |
| --- | --- |
| No Asignado |  |
| Desarrollador Backend | 25000 |
| Desarrollador Frontend | 22000 |
| QA / Tester | 18000 |

## Schedule

| ID | WBS | Task | Duration | Start | Finish | Predecessors | Constraint | Resources |
| --- | --- | --- | --- | --- | --- | --- | --- | --- |
| 1 | 0 | **AgroRuta - Plan de Proyecto (Presupuesto Hipotetico)** | 94d | 2026-08-03 | 2026-12-10 |  |  |  |
| 2 | 1 | **E2 - Gestión de Fincas y Lotes** | 11d | 2026-08-03 | 2026-08-17 |  |  |  |
| 3 | 1.1 | **E2-HU1 - Registrar una nueva finca** | 2d | 2026-08-03 | 2026-08-04 |  |  |  |
| 4 | 1.1.1 | E2-HU1-T1 - Backend: Implementar POST /api/fincas (FincaController, FincaService) | 2d | 2026-08-03 | 2026-08-04 |  |  | Desarrollador Backend |
| 5 | 1.1.2 | E2-HU1-T2 - Frontend: Construir formulario nueva-finca (nueva-finca.html/ts) | 2d | 2026-08-03 | 2026-08-04 |  |  | Desarrollador Frontend |
| 6 | 1.1.3 | E2-HU1-T3 - QA: Pruebas FincaServiceTest, FincaControllerTest y nueva-finca.spec.ts | 2d | 2026-08-03 | 2026-08-04 |  |  | QA / Tester |
| 7 | 1.2 | **E2-HU2 - Listar fincas del agricultor** | 2d | 2026-08-05 | 2026-08-06 |  |  |  |
| 8 | 1.2.1 | E2-HU2-T1 - Backend: Implementar GET /api/fincas/agricultor/{agricultorId} | 2d | 2026-08-05 | 2026-08-06 | 4 |  | Desarrollador Backend |
| 9 | 1.2.2 | E2-HU2-T2 - Frontend: Construir vista lista-fincas (lista-fincas.html/ts) | 2d | 2026-08-05 | 2026-08-06 | 5 |  | Desarrollador Frontend |
| 10 | 1.2.3 | E2-HU2-T3 - QA: Pruebas de listado en FincaControllerTest y lista-fincas.spec.ts | 2d | 2026-08-05 | 2026-08-06 | 6 |  | QA / Tester |
| 11 | 1.3 | **E2-HU3 - Ver detalle de una finca** | 1d | 2026-08-07 | 2026-08-07 |  |  |  |
| 12 | 1.3.1 | E2-HU3-T1 - Backend: Implementar GET /api/fincas/{id} | 1d | 2026-08-07 | 2026-08-07 | 8 |  | Desarrollador Backend |
| 13 | 1.3.2 | E2-HU3-T2 - Frontend: Construir vista detalle-finca con integración de mapa | 1d | 2026-08-07 | 2026-08-07 | 9 |  | Desarrollador Frontend |
| 14 | 1.3.3 | E2-HU3-T3 - QA: Pruebas detalle-finca.spec.ts | 1d | 2026-08-07 | 2026-08-07 | 10 |  | QA / Tester |
| 15 | 1.4 | **E2-HU4 - Actualizar geolocalización (centroide) de la finca** | 1d | 2026-08-10 | 2026-08-10 |  |  |  |
| 16 | 1.4.1 | E2-HU4-T1 - Backend: Implementar PATCH /api/fincas/{id}/centroide (ActualizarCentroideFincaRequest) | 1d | 2026-08-10 | 2026-08-10 | 12 |  | Desarrollador Backend |
| 17 | 1.4.2 | E2-HU4-T2 - Frontend: Implementar selector de ubicación en el mapa dentro de detalle-finca | 1d | 2026-08-10 | 2026-08-10 | 13 |  | Desarrollador Frontend |
| 18 | 1.4.3 | E2-HU4-T3 - QA: Pruebas del endpoint y del flujo de actualización de centroide | 1d | 2026-08-10 | 2026-08-10 | 14 |  | QA / Tester |
| 19 | 1.5 | **E2-HU5 - Eliminar una finca** | 0.5d | 2026-08-11 | 2026-08-11 |  |  |  |
| 20 | 1.5.1 | E2-HU5-T1 - Backend: Implementar DELETE /api/fincas/{id} | 0.5d | 2026-08-11 | 2026-08-11 | 16 |  | Desarrollador Backend |
| 21 | 1.5.2 | E2-HU5-T2 - Frontend: Agregar acción de eliminar en lista-fincas con modal de confirmación | 0.5d | 2026-08-11 | 2026-08-11 | 17 |  | Desarrollador Frontend |
| 22 | 1.5.3 | E2-HU5-T3 - QA: Pruebas de eliminación en FincaControllerTest | 0.5d | 2026-08-11 | 2026-08-11 | 18 |  | QA / Tester |
| 23 | 1.6 | **E2-HU6 - Registrar un nuevo lote en una finca** | 2d | 2026-08-11 | 2026-08-13 |  | start no later than 2026-08-11 |  |
| 24 | 1.6.1 | E2-HU6-T1 - Backend: Implementar POST /api/lotes (LoteController, LoteService) | 2d | 2026-08-11 | 2026-08-13 | 20 | start no later than 2026-08-11 | Desarrollador Backend |
| 25 | 1.6.2 | E2-HU6-T2 - Frontend: Construir formulario nuevo-lote | 2d | 2026-08-11 | 2026-08-13 | 21 | start no later than 2026-08-11 | Desarrollador Frontend |
| 26 | 1.6.3 | E2-HU6-T3 - QA: Pruebas LoteServiceTest y nuevo-lote.spec.ts | 2d | 2026-08-11 | 2026-08-13 | 22 | start no later than 2026-08-11 | QA / Tester |

Notes:
- 2: Registro y administración de fincas (con geolocalización) y de los lotes que las componen.

| ID | WBS | Task | Duration | Start | Finish | Predecessors | Constraint | Resources |
| --- | --- | --- | --- | --- | --- | --- | --- | --- |
| 27 | 1.7 | **E2-HU7 - Consultar lotes de una finca y ver su detalle** | 1d | 2026-08-13 | 2026-08-14 |  | start no later than 2026-08-13 |  |
| 28 | 1.7.1 | E2-HU7-T1 - Backend: Implementar GET /api/lotes/finca/{fincaId} y GET /api/lotes/{id} | 1d | 2026-08-13 | 2026-08-14 | 24 | start no later than 2026-08-13 | Desarrollador Backend |
| 29 | 1.7.2 | E2-HU7-T2 - Frontend: Construir vista detalle-lote | 1d | 2026-08-13 | 2026-08-14 | 25 | start no later than 2026-08-13 | Desarrollador Frontend |
| 30 | 1.7.3 | E2-HU7-T3 - QA: Pruebas detalle-lote.spec.ts | 1d | 2026-08-13 | 2026-08-14 | 26 | start no later than 2026-08-13 | QA / Tester |
| 31 | 1.8 | **E2-HU8 - Actualizar geometría (polígono) del lote** | 1d | 2026-08-14 | 2026-08-17 |  | start no later than 2026-08-14 |  |
| 32 | 1.8.1 | E2-HU8-T1 - Backend: Implementar PATCH /api/lotes/{id}/geometria (ActualizarGeometriaLoteRequest) | 1d | 2026-08-14 | 2026-08-17 | 28 | start no later than 2026-08-14 | Desarrollador Backend |
| 33 | 1.8.2 | E2-HU8-T2 - Frontend: Implementar editor de polígono en el mapa dentro de detalle-lote | 1d | 2026-08-14 | 2026-08-17 | 29 | start no later than 2026-08-14 | Desarrollador Frontend |
| 34 | 1.8.3 | E2-HU8-T3 - QA: Pruebas del endpoint de actualización de geometría | 1d | 2026-08-14 | 2026-08-17 | 30 | start no later than 2026-08-14 | QA / Tester |
| 35 | 1.9 | **E2-HU9 - Eliminar un lote** | 0.5d | 2026-08-17 | 2026-08-18 |  |  |  |
| 36 | 1.9.1 | E2-HU9-T1 - Backend: Implementar DELETE /api/lotes/{id} | 0.5d | 2026-08-17 | 2026-08-17 | 32 | start no later than 2026-08-17 | Desarrollador Backend |
| 37 | 1.9.2 | E2-HU9-T2 - Frontend: Agregar acción de eliminar lote con confirmación | 0.5d | 2026-08-17 | 2026-08-17 | 33 | start no later than 2026-08-17 | Desarrollador Frontend |
| 38 | 1.9.3 | E2-HU9-T3 - QA: Pruebas de eliminación de lote | 0.5d | 2026-08-17 | 2026-08-17 | 34 | start no later than 2026-08-17 | QA / Tester |
| 39 | 2 | **E4 - Gestión de Insumos Agrícolas** | 5.5d | 2026-08-18 | 2026-08-25 |  |  |  |
| 40 | 2.1 | **E4-HU1 - Registrar un nuevo insumo agrícola** | 1d | 2026-08-18 | 2026-08-18 |  |  |  |
| 41 | 2.1.1 | E4-HU1-T1 - Backend: Implementar POST /api/agricultural-inputs (AgriculturalInputController, AgriculturalInputService) | 1d | 2026-08-18 | 2026-08-18 | 36 |  | Desarrollador Backend |
| 42 | 2.1.2 | E4-HU1-T2 - QA: Pruebas AgriculturalInputServiceTest y AgriculturalInputControllerTest | 1d | 2026-08-18 | 2026-08-18 | 38 |  | QA / Tester |
| 43 | 2.2 | **E4-HU2 - Listar y buscar insumos agrícolas** | 1d | 2026-08-19 | 2026-08-19 |  |  |  |
| 44 | 2.2.1 | E4-HU2-T1 - Backend: Implementar GET /api/agricultural-inputs y lógica de búsqueda (SearchAgriculturalInputsUseCase) | 1d | 2026-08-19 | 2026-08-19 | 41 |  | Desarrollador Backend |
| 45 | 2.2.2 | E4-HU2-T2 - QA: Pruebas de listado y búsqueda de insumos | 1d | 2026-08-19 | 2026-08-19 | 42 |  | QA / Tester |
| 46 | 2.3 | **E4-HU3 - Ver detalle de un insumo agrícola** | 0.5d | 2026-08-20 | 2026-08-20 |  |  |  |
| 47 | 2.3.1 | E4-HU3-T1 - Backend: Implementar GET /api/agricultural-inputs/{id} (GetAgriculturalInputByIdUseCase) | 0.5d | 2026-08-20 | 2026-08-20 | 44 |  | Desarrollador Backend |
| 48 | 2.3.2 | E4-HU3-T2 - QA: Pruebas de consulta por ID, incluyendo caso no encontrado | 0.5d | 2026-08-20 | 2026-08-20 | 45 |  | QA / Tester |
| 49 | 2.4 | **E4-HU4 - Actualizar un insumo agrícola** | 0.5d | 2026-08-20 | 2026-08-21 |  |  |  |
| 50 | 2.4.1 | E4-HU4-T1 - Backend: Implementar PUT /api/agricultural-inputs/{id} (UpdateAgriculturalInputUseCase) | 0.5d | 2026-08-20 | 2026-08-20 | 47 | start no later than 2026-08-20 | Desarrollador Backend |
| 51 | 2.4.2 | E4-HU4-T2 - QA: Pruebas de actualización de insumo | 0.5d | 2026-08-20 | 2026-08-20 | 48 | start no later than 2026-08-20 | QA / Tester |

Notes:
- 39: Catálogo de insumos agrícolas (agroquímicos, fertilizantes, etc.) usados en las labores de cultivo.

| ID | WBS | Task | Duration | Start | Finish | Predecessors | Constraint | Resources |
| --- | --- | --- | --- | --- | --- | --- | --- | --- |
| 52 | 2.5 | **E4-HU5 - Eliminar un insumo agrícola** | 0.5d | 2026-08-21 | 2026-08-21 |  |  |  |
| 53 | 2.5.1 | E4-HU5-T1 - Backend: Implementar DELETE /api/agricultural-inputs/{id} (DeleteAgriculturalInputUseCase) | 0.5d | 2026-08-21 | 2026-08-21 | 50 |  | Desarrollador Backend |
| 54 | 2.5.2 | E4-HU5-T2 - QA: Pruebas de eliminación e integridad referencial | 0.5d | 2026-08-21 | 2026-08-21 | 51 |  | QA / Tester |
| 55 | 2.6 | **E4-HU6 - Precargar catálogo inicial de insumos agrícolas** | 1d | 2026-08-21 | 2026-08-24 |  | start no later than 2026-08-21 |  |
| 56 | 2.6.1 | E4-HU6-T1 - Backend: Crear migración Flyway V2__seed_agricultural_inputs.sql con datos base | 1d | 2026-08-21 | 2026-08-24 | 53 | start no later than 2026-08-21 | Desarrollador Backend |
| 57 | 2.6.2 | E4-HU6-T2 - QA: Verificar aplicación correcta de la migración en entorno limpio | 1d | 2026-08-21 | 2026-08-24 | 54 | start no later than 2026-08-21 | QA / Tester |
| 58 | 2.7 | **E4-HU7 - Seleccionar insumo agrícola al registrar una fumigación** | 5.5d | 2026-08-18 | 2026-08-25 |  |  |  |
| 59 | 2.7.1 | E4-HU7-T1 - Frontend: Integrar AgriculturalInput.service.ts en el formulario registrar-fumigacion | 1d | 2026-08-18 | 2026-08-18 | 37 |  | Desarrollador Frontend |
| 60 | 2.7.2 | E4-HU7-T2 - QA: Pruebas de integración del selector de insumos en registrar-fumigacion.spec.ts | 1d | 2026-08-24 | 2026-08-25 | 57 | start no later than 2026-08-24 | QA / Tester |
| 61 | 3 | **E1 - Autenticación y Gestión de Cuenta** | 19.5d | 2026-08-19 | 2026-09-15 |  |  |  |
| 62 | 3.1 | **E1-HU1 - Registro de nuevo usuario** | 7.5d | 2026-08-19 | 2026-08-28 |  |  |  |
| 63 | 3.1.1 | E1-HU1-T1 - Backend: Implementar endpoint POST /api/auth/registro (AuthController, AuthService, RegistrarUsuarioUseCase) | 2d | 2026-08-24 | 2026-08-26 | 56 | start no later than 2026-08-24 | Desarrollador Backend |
| 64 | 3.1.2 | E1-HU1-T2 - Backend: Validar unicidad de correo y encriptar contraseña (BCrypt) | 2d | 2026-08-26 | 2026-08-28 | 63 | start no later than 2026-08-26 | Desarrollador Backend |
| 65 | 3.1.3 | E1-HU1-T3 - Frontend: Construir formulario de registro (registro.html/registro.ts) con validaciones reactivas | 2d | 2026-08-19 | 2026-08-20 | 59 |  | Desarrollador Frontend |
| 66 | 3.1.4 | E1-HU1-T4 - Frontend: Conectar formulario al servicio auth.ts y manejar respuestas de error | 2d | 2026-08-21 | 2026-08-24 | 65 |  | Desarrollador Frontend |
| 67 | 3.1.5 | E1-HU1-T5 - QA: Pruebas unitarias AuthServiceTest, UserServiceTest y registro.spec.ts | 2d | 2026-08-25 | 2026-08-27 | 60 | start no later than 2026-08-25 | QA / Tester |
| 68 | 3.2 | **E1-HU2 - Inicio de sesión con JWT** | 9.5d | 2026-08-25 | 2026-09-07 |  |  |  |
| 69 | 3.2.1 | E1-HU2-T1 - Backend: Implementar endpoint POST /api/auth/login (AuthController, AuthService) | 2d | 2026-08-28 | 2026-09-01 | 64 | start no later than 2026-08-28 | Desarrollador Backend |
| 70 | 3.2.2 | E1-HU2-T2 - Backend: Generar y firmar JWT (JwtService, JwtTokenAdapter, TokenPort) | 2d | 2026-09-01 | 2026-09-03 | 69 | start no later than 2026-09-01 | Desarrollador Backend |
| 71 | 3.2.3 | E1-HU2-T3 - Backend: Configurar SecurityConfig y AuthProviderConfig | 2d | 2026-09-03 | 2026-09-07 | 70 | start no later than 2026-09-03 | Desarrollador Backend |
| 72 | 3.2.4 | E1-HU2-T4 - Frontend: Construir formulario de login (login.html/login.ts) | 2d | 2026-08-25 | 2026-08-26 | 66 |  | Desarrollador Frontend |
| 73 | 3.2.5 | E1-HU2-T5 - Frontend: Implementar jwt-interceptor.ts para adjuntar el token a las peticiones salientes | 2d | 2026-08-27 | 2026-08-28 | 72 |  | Desarrollador Frontend |
| 74 | 3.2.6 | E1-HU2-T6 - QA: Pruebas AuthControllerTest, JwtServiceTest y login.spec.ts | 2d | 2026-08-27 | 2026-08-31 | 67 | start no later than 2026-08-27 | QA / Tester |
| 75 | 3.3 | **E1-HU3 - Protección de rutas y autorización por rol** | 9.5d | 2026-08-31 | 2026-09-11 |  |  |  |
| 76 | 3.3.1 | E1-HU3-T1 - Backend: Implementar JwtAuthenticationFilter para validar el token en cada request | 2d | 2026-09-07 | 2026-09-09 | 71 | start no later than 2026-09-07 | Desarrollador Backend |
| 77 | 3.3.2 | E1-HU3-T2 - Backend: Definir catálogo de roles (Rol.java) y reglas de autorización por endpoint | 2d | 2026-09-09 | 2026-09-11 | 76 | start no later than 2026-09-09 | Desarrollador Backend |
| 78 | 3.3.3 | E1-HU3-T3 - Frontend: Implementar auth-guard.ts para proteger rutas privadas de Angular | 2d | 2026-08-31 | 2026-09-01 | 73 |  | Desarrollador Frontend |
| 79 | 3.3.4 | E1-HU3-T4 - QA: Pruebas JwtAuthenticationFilterTest, SecurityConfigTest y auth-guard.spec.ts | 2d | 2026-08-31 | 2026-09-02 | 74 | start no later than 2026-08-31 | QA / Tester |

Notes:
- 61: Registro, inicio de sesión, seguridad JWT, perfil de usuario y cambio de contraseña.

| ID | WBS | Task | Duration | Start | Finish | Predecessors | Constraint | Resources |
| --- | --- | --- | --- | --- | --- | --- | --- | --- |
| 80 | 3.4 | **E1-HU4 - Consultar y actualizar perfil de usuario** | 8.5d | 2026-09-02 | 2026-09-14 |  |  |  |
| 81 | 3.4.1 | E1-HU4-T1 - Backend: Implementar GET/PUT /api/configuration/perfil (ProfileController, ProfileService) | 1d | 2026-09-11 | 2026-09-14 | 77 | start no later than 2026-09-11 | Desarrollador Backend |
| 82 | 3.4.2 | E1-HU4-T2 - Frontend: Crear página de configuración (configuration-page) | 1d | 2026-09-02 | 2026-09-02 | 78 |  | Desarrollador Frontend |
| 83 | 3.4.3 | E1-HU4-T3 - Frontend: Implementar profile-form y conectar con profile.service.ts | 1d | 2026-09-03 | 2026-09-03 | 82 |  | Desarrollador Frontend |
| 84 | 3.4.4 | E1-HU4-T4 - QA: Pruebas ProfileServiceTest, ProfileControllerTest y profile-form.component.spec.ts | 1d | 2026-09-02 | 2026-09-03 | 79 | start no later than 2026-09-02 | QA / Tester |
| 85 | 3.5 | **E1-HU5 - Cambiar contraseña** | 8d | 2026-09-03 | 2026-09-15 |  | start no later than 2026-09-03 |  |
| 86 | 3.5.1 | E1-HU5-T1 - Backend: Implementar PATCH /api/configuration/perfil/password (ChangePasswordUseCase) | 1d | 2026-09-14 | 2026-09-15 | 81 | start no later than 2026-09-14 | Desarrollador Backend |
| 87 | 3.5.2 | E1-HU5-T2 - Frontend: Construir change-password-form.component | 1d | 2026-09-04 | 2026-09-04 | 83 |  | Desarrollador Frontend |
| 88 | 3.5.3 | E1-HU5-T3 - QA: Pruebas del caso de uso y change-password-form.component.spec.ts | 1d | 2026-09-03 | 2026-09-04 | 84 | start no later than 2026-09-03 | QA / Tester |
| 89 | 4 | **E7 - Reportes** | 13d | 2026-09-04 | 2026-09-23 |  | start no later than 2026-09-04 |  |
| 90 | 4.1 | **E7-HU1 - Panel principal de reportes** | 1d | 2026-09-04 | 2026-09-07 |  | start no later than 2026-09-04 |  |
| 91 | 4.1.1 | E7-HU1-T1 - Frontend: Construir report-home.component con accesos a cada reporte | 0.5d | 2026-09-07 | 2026-09-07 | 87 |  | Desarrollador Frontend |
| 92 | 4.1.2 | E7-HU1-T2 - QA: Pruebas de navegación del módulo de reportes | 0.5d | 2026-09-04 | 2026-09-04 | 88 | start no later than 2026-09-04 | QA / Tester |
| 93 | 4.2 | **E7-HU2 - Generar y descargar reporte PDF de producción de cultivos** | 8.5d | 2026-09-07 | 2026-09-17 |  |  |  |
| 94 | 4.2.1 | E7-HU2-T1 - Backend: Implementar GET /api/reports/crops (ReportController, GenerateCropReportService, PdfReportService) | 2d | 2026-09-15 | 2026-09-17 | 86 | start no later than 2026-09-15 | Desarrollador Backend |
| 95 | 4.2.2 | E7-HU2-T2 - Frontend: Construir crop-report.component con botón de descarga de PDF | 2d | 2026-09-07 | 2026-09-09 | 91 | start no later than 2026-09-07 | Desarrollador Frontend |
| 96 | 4.2.3 | E7-HU2-T3 - QA: Pruebas GenerateCropReportServiceTest y PdfReportServiceTest | 2d | 2026-09-07 | 2026-09-08 | 92 |  | QA / Tester |
| 97 | 4.3 | **E7-HU3 - Vista previa del reporte de cultivos** | 7.5d | 2026-09-09 | 2026-09-18 |  |  |  |
| 98 | 4.3.1 | E7-HU3-T1 - Backend: Implementar GET /api/reports/crops/preview | 1d | 2026-09-17 | 2026-09-18 | 94 | start no later than 2026-09-17 | Desarrollador Backend |
| 99 | 4.3.2 | E7-HU3-T2 - Frontend: Mostrar vista previa de datos en crop-report.component | 1d | 2026-09-09 | 2026-09-10 | 95 | start no later than 2026-09-09 | Desarrollador Frontend |
| 100 | 4.3.3 | E7-HU3-T3 - QA: Pruebas de la vista previa del reporte de cultivos | 1d | 2026-09-09 | 2026-09-09 | 96 |  | QA / Tester |
| 101 | 4.4 | **E7-HU4 - Generar y descargar reporte PDF de nómina** | 8.5d | 2026-09-10 | 2026-09-22 |  |  |  |
| 102 | 4.4.1 | E7-HU4-T1 - Backend: Implementar GET /api/reports/payroll (GeneratePayrollReportService) | 2d | 2026-09-18 | 2026-09-22 | 98 | start no later than 2026-09-18 | Desarrollador Backend |
| 103 | 4.4.2 | E7-HU4-T2 - Frontend: Construir payroll-report.component con botón de descarga de PDF | 2d | 2026-09-10 | 2026-09-14 | 99 | start no later than 2026-09-10 | Desarrollador Frontend |
| 104 | 4.4.3 | E7-HU4-T3 - QA: Pruebas GeneratePayrollReportServiceTest | 2d | 2026-09-10 | 2026-09-11 | 100 |  | QA / Tester |

Notes:
- 89: Generación de reportes en PDF de producción de cultivos y de nómina/pagos.

| ID | WBS | Task | Duration | Start | Finish | Predecessors | Constraint | Resources |
| --- | --- | --- | --- | --- | --- | --- | --- | --- |
| 105 | 4.5 | **E7-HU5 - Vista previa del reporte de nómina** | 7.5d | 2026-09-14 | 2026-09-23 |  |  |  |
| 106 | 4.5.1 | E7-HU5-T1 - Backend: Implementar GET /api/reports/payroll/preview | 1d | 2026-09-22 | 2026-09-23 | 102 | start no later than 2026-09-22 | Desarrollador Backend |
| 107 | 4.5.2 | E7-HU5-T2 - Frontend: Mostrar vista previa de datos en payroll-report.component | 1d | 2026-09-14 | 2026-09-15 | 103 | start no later than 2026-09-14 | Desarrollador Frontend |
| 108 | 4.5.3 | E7-HU5-T3 - QA: Pruebas de la vista previa del reporte de nómina | 1d | 2026-09-14 | 2026-09-14 | 104 |  | QA / Tester |
| 109 | 5 | **E9 - Infraestructura, Seguridad y Calidad** | 24d | 2026-09-15 | 2026-10-16 |  |  |  |
| 110 | 5.1 | **E9-HU1 - Manejo global de excepciones en el backend** | 10.5d | 2026-09-15 | 2026-09-29 |  |  |  |
| 111 | 5.1.1 | E9-HU1-T1 - Backend: Implementar GlobalExceptionHandler, ErrorCode y ErrorResponse | 2d | 2026-09-23 | 2026-09-25 | 106 | start no later than 2026-09-23 | Desarrollador Backend |
| 112 | 5.1.2 | E9-HU1-T2 - Backend: Definir BusinessException, ResourceNotFoundException y ExternalApiException | 2d | 2026-09-25 | 2026-09-29 | 111 | start no later than 2026-09-25 | Desarrollador Backend |
| 113 | 5.1.3 | E9-HU1-T3 - QA: Pruebas GlobalExceptionHandlerTest y de cada excepción | 2d | 2026-09-15 | 2026-09-16 | 108 |  | QA / Tester |
| 114 | 5.2 | **E9-HU2 - Logging estructurado y trazabilidad de peticiones** | 11.5d | 2026-09-17 | 2026-10-02 |  |  |  |
| 115 | 5.2.1 | E9-HU2-T1 - Backend: Implementar RequestLoggingFilter y MdcKeys | 1d | 2026-09-29 | 2026-09-30 | 112 | start no later than 2026-09-29 | Desarrollador Backend |
| 116 | 5.2.2 | E9-HU2-T2 - Backend: Implementar LoggingAspect para trazabilidad de métodos clave | 1d | 2026-09-30 | 2026-10-01 | 115 | start no later than 2026-09-30 | Desarrollador Backend |
| 117 | 5.2.3 | E9-HU2-T3 - Backend: Configurar logback-spring.xml (rotación diaria de logs de error y aplicación) | 1d | 2026-10-01 | 2026-10-02 | 116 | start no later than 2026-10-01 | Desarrollador Backend |
| 118 | 5.2.4 | E9-HU2-T4 - QA: Verificación manual de logs generados en distintos escenarios | 1d | 2026-09-17 | 2026-09-17 | 113 |  | QA / Tester |
| 119 | 5.3 | **E9-HU3 - Configuración de CORS** | 12.5d | 2026-09-18 | 2026-10-06 |  |  |  |
| 120 | 5.3.1 | E9-HU3-T1 - Backend: Implementar CorsConfig | 2d | 2026-10-02 | 2026-10-06 | 117 | start no later than 2026-10-02 | Desarrollador Backend |
| 121 | 5.3.2 | E9-HU3-T2 - QA: Pruebas CorsConfigTest | 2d | 2026-09-18 | 2026-09-21 | 118 |  | QA / Tester |
| 122 | 5.4 | **E9-HU4 - Documentación de la API con OpenAPI/Swagger** | 11.5d | 2026-09-22 | 2026-10-07 |  |  |  |
| 123 | 5.4.1 | E9-HU4-T1 - Backend: Implementar OpenApiConfig | 1d | 2026-10-06 | 2026-10-07 | 120 | start no later than 2026-10-06 | Desarrollador Backend |
| 124 | 5.4.2 | E9-HU4-T2 - QA: Pruebas OpenApiConfigTest y verificación manual de la documentación generada | 1d | 2026-09-22 | 2026-09-22 | 121 |  | QA / Tester |
| 125 | 5.5 | **E9-HU5 - Gestión de migraciones de base de datos** | 14.5d | 2026-09-23 | 2026-10-13 |  |  |  |
| 126 | 5.5.1 | E9-HU5-T1 - Backend: Implementar FlywayConfig | 2d | 2026-10-07 | 2026-10-09 | 123 | start no later than 2026-10-07 | Desarrollador Backend |
| 127 | 5.5.2 | E9-HU5-T2 - Backend: Mantener migraciones versionadas (incluye V2__seed_agricultural_inputs.sql) | 2d | 2026-10-09 | 2026-10-13 | 126 | start no later than 2026-10-09 | Desarrollador Backend |
| 128 | 5.5.3 | E9-HU5-T3 - QA: Pruebas FlywayConfigTest y validación en entorno limpio | 2d | 2026-09-23 | 2026-09-24 | 124 |  | QA / Tester |

Notes:
- 109: Requisitos no funcionales: manejo de errores, logging, CORS, documentación de API, migraciones de BD, Docker, calidad de código y pruebas E2E.

| ID | WBS | Task | Duration | Start | Finish | Predecessors | Constraint | Resources |
| --- | --- | --- | --- | --- | --- | --- | --- | --- |
| 129 | 5.6 | **E9-HU6 - Contenerización y despliegue del backend** | 14.5d | 2026-09-25 | 2026-10-15 |  |  |  |
| 130 | 5.6.1 | E9-HU6-T1 - Backend: Crear/mantener Dockerfile del backend | 1d | 2026-10-13 | 2026-10-14 | 127 | start no later than 2026-10-13 | Desarrollador Backend |
| 131 | 5.6.2 | E9-HU6-T2 - Backend: Crear/mantener docker-compose.yml con los servicios necesarios | 1d | 2026-10-14 | 2026-10-15 | 130 | start no later than 2026-10-14 | Desarrollador Backend |
| 132 | 5.6.3 | E9-HU6-T3 - QA: Verificar build y levantamiento del contenedor en limpio | 1d | 2026-09-25 | 2026-09-25 | 128 |  | QA / Tester |
| 133 | 5.7 | **E9-HU7 - Contenerización y despliegue del frontend** | 9.5d | 2026-09-15 | 2026-09-28 |  | start no later than 2026-09-15 |  |
| 134 | 5.7.1 | E9-HU7-T1 - Frontend: Crear/mantener Dockerfile del frontend | 1d | 2026-09-15 | 2026-09-16 | 107 | start no later than 2026-09-15 | Desarrollador Frontend |
| 135 | 5.7.2 | E9-HU7-T2 - Frontend: Configurar nginx.conf para servir la SPA y manejar rutas | 1d | 2026-09-16 | 2026-09-17 | 134 | start no later than 2026-09-16 | Desarrollador Frontend |
| 136 | 5.7.3 | E9-HU7-T3 - QA: Verificar build y despliegue del contenedor en limpio | 1d | 2026-09-28 | 2026-09-28 | 132 |  | QA / Tester |
| 137 | 5.8 | **E9-HU8 - Análisis de calidad de código** | 20.5d | 2026-09-17 | 2026-10-15 |  | start no later than 2026-09-17 |  |
| 138 | 5.8.1 | E9-HU8-T1 - Backend: Configurar sonar-project.properties y ejecutar análisis | 0.5d | 2026-10-15 | 2026-10-15 | 131 | start no later than 2026-10-15 | Desarrollador Backend |
| 139 | 5.8.2 | E9-HU8-T2 - Frontend: Configurar sonar-project.properties y ejecutar análisis | 0.5d | 2026-09-17 | 2026-09-17 | 135 | start no later than 2026-09-17 | Desarrollador Frontend |
| 140 | 5.8.3 | E9-HU8-T3 - QA: Revisar y priorizar hallazgos críticos del análisis | 0.5d | 2026-09-29 | 2026-09-29 | 136 |  | QA / Tester |
| 141 | 5.9 | **E9-HU9 - Manejo global de errores en el frontend** | 8.5d | 2026-09-18 | 2026-09-30 |  |  |  |
| 142 | 5.9.1 | E9-HU9-T1 - Frontend: Implementar error.handler.ts | 1d | 2026-09-18 | 2026-09-18 | 139 |  | Desarrollador Frontend |
| 143 | 5.9.2 | E9-HU9-T2 - QA: Pruebas error.handler.spec.ts | 1d | 2026-09-29 | 2026-09-30 | 140 | start no later than 2026-09-29 | QA / Tester |
| 144 | 5.10 | **E9-HU10 - Interceptor de logging en el frontend** | 8d | 2026-09-21 | 2026-09-30 |  |  |  |
| 145 | 5.10.1 | E9-HU10-T1 - Frontend: Implementar logging.interceptor.ts y logging.service.ts | 0.5d | 2026-09-21 | 2026-09-21 | 142 |  | Desarrollador Frontend |
| 146 | 5.10.2 | E9-HU10-T2 - QA: Pruebas logging.interceptor.spec.ts y logging.service.spec.ts | 0.5d | 2026-09-30 | 2026-09-30 | 143 | start no later than 2026-09-30 | QA / Tester |
| 147 | 5.11 | **E9-HU11 - Pruebas end-to-end (E2E) de los flujos principales** | 4d | 2026-10-01 | 2026-10-06 |  |  |  |
| 148 | 5.11.1 | E9-HU11-T1 - QA: Implementar/mantener e2e configuracion.spec.ts | 1d | 2026-10-01 | 2026-10-01 | 146 |  | QA / Tester |
| 149 | 5.11.2 | E9-HU11-T2 - QA: Implementar/mantener e2e reportes.spec.ts | 1d | 2026-10-02 | 2026-10-02 | 148 |  | QA / Tester |
| 150 | 5.11.3 | E9-HU11-T3 - QA: Implementar/mantener e2e workers.spec.ts | 1d | 2026-10-05 | 2026-10-05 | 149 |  | QA / Tester |
| 151 | 5.11.4 | E9-HU11-T4 - QA: Configurar playwright.config.ts para ejecución en pipeline | 1d | 2026-10-06 | 2026-10-06 | 150 |  | QA / Tester |
| 152 | 5.12 | **E9-HU12 - Configuración de variables de entorno por ambiente** | 19.5d | 2026-09-21 | 2026-10-16 |  | start no later than 2026-09-21 |  |
| 153 | 5.12.1 | E9-HU12-T1 - Backend: Mantener .env.example y application-prod.yml | 1d | 2026-10-16 | 2026-10-16 | 138 |  | Desarrollador Backend |
| 154 | 5.12.2 | E9-HU12-T2 - Frontend: Mantener environment.ts, environment.development.ts y environment.prod.ts | 1d | 2026-09-21 | 2026-09-22 | 145 | start no later than 2026-09-21 | Desarrollador Frontend |
| 155 | 5.12.3 | E9-HU12-T3 - QA: Verificar que no se versionan credenciales reales | 1d | 2026-10-07 | 2026-10-07 | 151 |  | QA / Tester |

| ID | WBS | Task | Duration | Start | Finish | Predecessors | Constraint | Resources |
| --- | --- | --- | --- | --- | --- | --- | --- | --- |
| 156 | 6 | **E3 - Gestión del Ciclo de Cultivo** | 34d | 2026-09-22 | 2026-11-09 |  | start no later than 2026-09-22 |  |
| 157 | 6.1 | **E3-HU1 - Registrar una nueva siembra** | 20.5d | 2026-09-22 | 2026-10-20 |  | start no later than 2026-09-22 |  |
| 158 | 6.1.1 | E3-HU1-T1 - Backend: Implementar POST /api/siembras (SiembraController, SiembraService) | 2d | 2026-10-19 | 2026-10-20 | 153 |  | Desarrollador Backend |
| 159 | 6.1.2 | E3-HU1-T2 - Frontend: Construir formulario nueva-siembra | 2d | 2026-09-22 | 2026-09-24 | 154 | start no later than 2026-09-22 | Desarrollador Frontend |
| 160 | 6.1.3 | E3-HU1-T3 - QA: Pruebas SiembraServiceTest y nueva-siembra.spec.ts | 2d | 2026-10-08 | 2026-10-09 | 155 |  | QA / Tester |
| 161 | 6.2 | **E3-HU2 - Listar cultivos/siembras por lote o por estado** | 20.5d | 2026-09-24 | 2026-10-22 |  | start no later than 2026-09-24 |  |
| 162 | 6.2.1 | E3-HU2-T1 - Backend: Implementar GET /api/siembras/lote/{loteId} y GET /api/siembras/estado/{estado} | 2d | 2026-10-21 | 2026-10-22 | 158 |  | Desarrollador Backend |
| 163 | 6.2.2 | E3-HU2-T2 - Frontend: Construir vista lista-cultivos con filtro por estado | 2d | 2026-09-24 | 2026-09-28 | 159 | start no later than 2026-09-24 | Desarrollador Frontend |
| 164 | 6.2.3 | E3-HU2-T3 - QA: Pruebas de listado y filtrado | 2d | 2026-10-12 | 2026-10-13 | 160 |  | QA / Tester |
| 165 | 6.3 | **E3-HU3 - Ver detalle de una siembra** | 19.5d | 2026-09-28 | 2026-10-23 |  | start no later than 2026-09-28 |  |
| 166 | 6.3.1 | E3-HU3-T1 - Backend: Implementar GET /api/siembras/{id} | 1d | 2026-10-23 | 2026-10-23 | 162 |  | Desarrollador Backend |
| 167 | 6.3.2 | E3-HU3-T2 - Frontend: Construir vista detalle-siembra | 1d | 2026-09-28 | 2026-09-29 | 163 | start no later than 2026-09-28 | Desarrollador Frontend |
| 168 | 6.3.3 | E3-HU3-T3 - QA: Pruebas detalle-siembra.spec.ts | 1d | 2026-10-14 | 2026-10-14 | 164 |  | QA / Tester |
| 169 | 6.4 | **E3-HU4 - Avanzar etapa del cultivo** | 19.5d | 2026-09-29 | 2026-10-26 |  | start no later than 2026-09-29 |  |
| 170 | 6.4.1 | E3-HU4-T1 - Backend: Implementar PUT /api/siembras/{id}/avanzar-etapa y reglas de transición de EstadoCultivo | 1d | 2026-10-26 | 2026-10-26 | 166 |  | Desarrollador Backend |
| 171 | 6.4.2 | E3-HU4-T2 - Frontend: Agregar acción 'avanzar etapa' en detalle-siembra | 1d | 2026-09-29 | 2026-09-30 | 167 | start no later than 2026-09-29 | Desarrollador Frontend |
| 172 | 6.4.3 | E3-HU4-T3 - QA: Pruebas SiembraTest (dominio) y SiembraControllerTest | 1d | 2026-10-15 | 2026-10-15 | 168 |  | QA / Tester |
| 173 | 6.5 | **E3-HU5 - Eliminar una siembra** | 19d | 2026-09-30 | 2026-10-27 |  | start no later than 2026-09-30 |  |
| 174 | 6.5.1 | E3-HU5-T1 - Backend: Implementar DELETE /api/siembras/{id} | 0.5d | 2026-10-27 | 2026-10-27 | 170 |  | Desarrollador Backend |
| 175 | 6.5.2 | E3-HU5-T2 - Frontend: Agregar acción de eliminar siembra con confirmación | 0.5d | 2026-09-30 | 2026-09-30 | 171 | start no later than 2026-09-30 | Desarrollador Frontend |
| 176 | 6.5.3 | E3-HU5-T3 - QA: Pruebas de eliminación de siembra | 0.5d | 2026-10-16 | 2026-10-16 | 172 |  | QA / Tester |
| 177 | 6.6 | **E3-HU6 - Registrar actividad de cultivo** | 20.5d | 2026-10-01 | 2026-10-29 |  |  |  |
| 178 | 6.6.1 | E3-HU6-T1 - Backend: Implementar POST /api/actividades (ActividadCultivoController, ActividadCultivoService) | 2d | 2026-10-27 | 2026-10-29 | 174 | start no later than 2026-10-27 | Desarrollador Backend |
| 179 | 6.6.2 | E3-HU6-T2 - Frontend: Construir formulario registrar-actividad | 2d | 2026-10-01 | 2026-10-02 | 175 |  | Desarrollador Frontend |
| 180 | 6.6.3 | E3-HU6-T3 - QA: Pruebas ActividadCultivoServiceTest y registrar-actividad.spec.ts | 2d | 2026-10-16 | 2026-10-20 | 176 | start no later than 2026-10-16 | QA / Tester |

Notes:
- 156: Registro de siembras, actividades de cultivo, fumigaciones y cosechas de uchuva.

| ID | WBS | Task | Duration | Start | Finish | Predecessors | Constraint | Resources |
| --- | --- | --- | --- | --- | --- | --- | --- | --- |
| 181 | 6.7 | **E3-HU7 - Consultar actividades de una siembra** | 19.5d | 2026-10-05 | 2026-10-30 |  |  |  |
| 182 | 6.7.1 | E3-HU7-T1 - Backend: Implementar GET /api/actividades/siembra/{siembraId} | 1d | 2026-10-29 | 2026-10-30 | 178 | start no later than 2026-10-29 | Desarrollador Backend |
| 183 | 6.7.2 | E3-HU7-T2 - Frontend: Mostrar historial de actividades en detalle-siembra | 1d | 2026-10-05 | 2026-10-05 | 179 |  | Desarrollador Frontend |
| 184 | 6.7.3 | E3-HU7-T3 - QA: Pruebas de consulta de actividades | 1d | 2026-10-20 | 2026-10-21 | 180 | start no later than 2026-10-20 | QA / Tester |
| 185 | 6.8 | **E3-HU8 - Registrar fumigación con insumo utilizado** | 20.5d | 2026-10-06 | 2026-11-03 |  |  |  |
| 186 | 6.8.1 | E3-HU8-T1 - Backend: Implementar POST /api/fumigaciones (FumigacionController, FumigacionService, RegistrarFumigacionRequest) | 2d | 2026-10-30 | 2026-11-03 | 182 | start no later than 2026-10-30 | Desarrollador Backend |
| 187 | 6.8.2 | E3-HU8-T2 - Frontend: Construir formulario registrar-fumigacion con selector de insumo agrícola | 2d | 2026-10-06 | 2026-10-07 | 183 |  | Desarrollador Frontend |
| 188 | 6.8.3 | E3-HU8-T3 - QA: Pruebas FumigacionServiceTest y registrar-fumigacion.spec.ts | 2d | 2026-10-21 | 2026-10-23 | 184 | start no later than 2026-10-21 | QA / Tester |
| 189 | 6.9 | **E3-HU9 - Consultar fumigaciones de una siembra** | 19.5d | 2026-10-08 | 2026-11-04 |  |  |  |
| 190 | 6.9.1 | E3-HU9-T1 - Backend: Implementar GET /api/fumigaciones/siembra/{siembraId} | 1d | 2026-11-03 | 2026-11-04 | 186 | start no later than 2026-11-03 | Desarrollador Backend |
| 191 | 6.9.2 | E3-HU9-T2 - Frontend: Mostrar historial de fumigaciones en detalle-siembra | 1d | 2026-10-08 | 2026-10-08 | 187 |  | Desarrollador Frontend |
| 192 | 6.9.3 | E3-HU9-T3 - QA: Pruebas de consulta de fumigaciones | 1d | 2026-10-23 | 2026-10-26 | 188 | start no later than 2026-10-23 | QA / Tester |
| 193 | 6.10 | **E3-HU10 - Registrar cosecha** | 20.5d | 2026-10-09 | 2026-11-06 |  |  |  |
| 194 | 6.10.1 | E3-HU10-T1 - Backend: Implementar POST /api/cosechas (CosechaController, CosechaService) | 2d | 2026-11-04 | 2026-11-06 | 190 | start no later than 2026-11-04 | Desarrollador Backend |
| 195 | 6.10.2 | E3-HU10-T2 - Frontend: Construir formulario registrar-cosecha | 2d | 2026-10-09 | 2026-10-12 | 191 |  | Desarrollador Frontend |
| 196 | 6.10.3 | E3-HU10-T3 - QA: Pruebas CosechaServiceTest y registrar-cosecha.spec.ts | 2d | 2026-10-26 | 2026-10-28 | 192 | start no later than 2026-10-26 | QA / Tester |
| 197 | 6.11 | **E3-HU11 - Consultar cosechas y total de kilogramos por siembra** | 19.5d | 2026-10-13 | 2026-11-09 |  |  |  |
| 198 | 6.11.1 | E3-HU11-T1 - Backend: Implementar GET /api/cosechas/siembra/{siembraId} y /total-kg | 1d | 2026-11-06 | 2026-11-09 | 194 | start no later than 2026-11-06 | Desarrollador Backend |
| 199 | 6.11.2 | E3-HU11-T2 - Frontend: Mostrar historial y total de cosecha en detalle-siembra | 1d | 2026-10-13 | 2026-10-13 | 195 |  | Desarrollador Frontend |
| 200 | 6.11.3 | E3-HU11-T3 - QA: Pruebas de consulta y cálculo de total de kg | 1d | 2026-10-28 | 2026-10-29 | 196 | start no later than 2026-10-28 | QA / Tester |
| 201 | 7 | **E5 - Gestión de Trabajadores y Cargos** | 28d | 2026-10-14 | 2026-11-20 |  |  |  |
| 202 | 7.1 | **E5-HU1 - Registrar un nuevo trabajador** | 20.5d | 2026-10-14 | 2026-11-11 |  |  |  |
| 203 | 7.1.1 | E5-HU1-T1 - Backend: Implementar POST /api/trabajadores (TrabajadorController, TrabajadorService) | 2d | 2026-11-09 | 2026-11-11 | 198 | start no later than 2026-11-09 | Desarrollador Backend |
| 204 | 7.1.2 | E5-HU1-T2 - Frontend: Implementar formulario de registro de trabajador en el módulo de roster | 2d | 2026-10-14 | 2026-10-15 | 199 |  | Desarrollador Frontend |
| 205 | 7.1.3 | E5-HU1-T3 - QA: Pruebas TrabajadorServiceTest y TrabajadorControllerTest | 2d | 2026-10-29 | 2026-11-02 | 200 | start no later than 2026-10-29 | QA / Tester |

Notes:
- 201: Administración del personal de la finca: registro, cargos, estados y actividades laborales.

| ID | WBS | Task | Duration | Start | Finish | Predecessors | Constraint | Resources |
| --- | --- | --- | --- | --- | --- | --- | --- | --- |
| 206 | 7.2 | **E5-HU2 - Listar trabajadores (activos y todos)** | 20.5d | 2026-10-16 | 2026-11-13 |  |  |  |
| 207 | 7.2.1 | E5-HU2-T1 - Backend: Implementar GET /api/trabajadores y GET /api/trabajadores/todos | 2d | 2026-11-11 | 2026-11-13 | 203 | start no later than 2026-11-11 | Desarrollador Backend |
| 208 | 7.2.2 | E5-HU2-T2 - Frontend: Construir vista list-roster | 2d | 2026-10-16 | 2026-10-19 | 204 |  | Desarrollador Frontend |
| 209 | 7.2.3 | E5-HU2-T3 - QA: Pruebas de listado y list-roster.spec.ts | 2d | 2026-11-02 | 2026-11-04 | 205 | start no later than 2026-11-02 | QA / Tester |
| 210 | 7.3 | **E5-HU3 - Ver y editar detalle de un trabajador** | 19.5d | 2026-10-20 | 2026-11-16 |  |  |  |
| 211 | 7.3.1 | E5-HU3-T1 - Backend: Implementar GET /api/trabajadores/{id} y PUT /api/trabajadores/{id} | 1d | 2026-11-13 | 2026-11-16 | 207 | start no later than 2026-11-13 | Desarrollador Backend |
| 212 | 7.3.2 | E5-HU3-T2 - Frontend: Construir vista detail-roster con edición de datos | 1d | 2026-10-20 | 2026-10-20 | 208 |  | Desarrollador Frontend |
| 213 | 7.3.3 | E5-HU3-T3 - QA: Pruebas detail-roster.spec.ts | 1d | 2026-11-04 | 2026-11-05 | 209 | start no later than 2026-11-04 | QA / Tester |
| 214 | 7.4 | **E5-HU4 - Asignar cargo a un trabajador** | 19.5d | 2026-10-21 | 2026-11-17 |  |  |  |
| 215 | 7.4.1 | E5-HU4-T1 - Backend: Implementar PATCH /api/trabajadores/{id}/cargo/{cargoId} | 1d | 2026-11-16 | 2026-11-17 | 211 | start no later than 2026-11-16 | Desarrollador Backend |
| 216 | 7.4.2 | E5-HU4-T2 - Frontend: Agregar acción de asignar cargo en detail-roster | 1d | 2026-10-21 | 2026-10-21 | 212 |  | Desarrollador Frontend |
| 217 | 7.4.3 | E5-HU4-T3 - QA: Pruebas de asignación de cargo | 1d | 2026-11-05 | 2026-11-06 | 213 | start no later than 2026-11-05 | QA / Tester |
| 218 | 7.5 | **E5-HU5 - Cambiar estado de un trabajador (desactivar/suspender/reactivar)** | 19.5d | 2026-10-22 | 2026-11-18 |  |  |  |
| 219 | 7.5.1 | E5-HU5-T1 - Backend: Implementar PATCH /api/trabajadores/{id}/desactivar, /suspender y /reactivar | 1d | 2026-11-17 | 2026-11-18 | 215 | start no later than 2026-11-17 | Desarrollador Backend |
| 220 | 7.5.2 | E5-HU5-T2 - Frontend: Agregar acciones de cambio de estado en list-roster/detail-roster | 1d | 2026-10-22 | 2026-10-22 | 216 |  | Desarrollador Frontend |
| 221 | 7.5.3 | E5-HU5-T3 - QA: Pruebas TrabajadorTest (dominio) para transiciones de estado | 1d | 2026-11-06 | 2026-11-09 | 217 | start no later than 2026-11-06 | QA / Tester |
| 222 | 7.6 | **E5-HU6 - Gestionar cargos (CRUD)** | 19.5d | 2026-10-23 | 2026-11-19 |  |  |  |
| 223 | 7.6.1 | E5-HU6-T1 - Backend: Implementar CRUD completo en CargoController (GET, POST, PUT, DELETE /api/cargos) | 1d | 2026-11-18 | 2026-11-19 | 219 | start no later than 2026-11-18 | Desarrollador Backend |
| 224 | 7.6.2 | E5-HU6-T2 - Frontend: Construir vista list-post para gestión de cargos | 1d | 2026-10-23 | 2026-10-23 | 220 |  | Desarrollador Frontend |
| 225 | 7.6.3 | E5-HU6-T3 - QA: Pruebas CargoServiceTest y CargoControllerTest | 1d | 2026-11-09 | 2026-11-10 | 221 | start no later than 2026-11-09 | QA / Tester |
| 226 | 7.7 | **E5-HU7 - Registrar actividad laboral de un trabajador** | 19.5d | 2026-10-26 | 2026-11-20 |  |  |  |
| 227 | 7.7.1 | E5-HU7-T1 - Backend: Implementar POST /api/worker/actividades (ActividadController, ActividadService) | 1d | 2026-11-19 | 2026-11-20 | 223 | start no later than 2026-11-19 | Desarrollador Backend |
| 228 | 7.7.2 | E5-HU7-T2 - Frontend: Habilitar registro de actividad desde el módulo de trabajadores | 1d | 2026-10-26 | 2026-10-26 | 224 |  | Desarrollador Frontend |
| 229 | 7.7.3 | E5-HU7-T3 - QA: Pruebas ActividadServiceTest | 1d | 2026-11-10 | 2026-11-11 | 225 | start no later than 2026-11-10 | QA / Tester |

| ID | WBS | Task | Duration | Start | Finish | Predecessors | Constraint | Resources |
| --- | --- | --- | --- | --- | --- | --- | --- | --- |
| 230 | 7.8 | **E5-HU8 - Listar, editar y eliminar actividades laborales** | 19d | 2026-10-27 | 2026-11-20 |  |  |  |
| 231 | 7.8.1 | E5-HU8-T1 - Backend: Implementar GET, PUT y DELETE /api/worker/actividades/{id} | 0.5d | 2026-11-20 | 2026-11-20 | 227 | start no later than 2026-11-20 | Desarrollador Backend |
| 232 | 7.8.2 | E5-HU8-T2 - Frontend: Construir vista list-activities | 0.5d | 2026-10-27 | 2026-10-27 | 228 |  | Desarrollador Frontend |
| 233 | 7.8.3 | E5-HU8-T3 - QA: Pruebas ActividadControllerTest y list-activities.spec.ts | 0.5d | 2026-11-11 | 2026-11-11 | 229 | start no later than 2026-11-11 | QA / Tester |
| 234 | 7.9 | **E5-HU9 - Panel principal del módulo de trabajadores** | 12d | 2026-10-27 | 2026-11-12 |  | start no later than 2026-10-27 |  |
| 235 | 7.9.1 | E5-HU9-T1 - Frontend: Construir worker-home.html/ts con accesos a los submódulos | 0.5d | 2026-10-27 | 2026-10-27 | 232 | start no later than 2026-10-27 | Desarrollador Frontend |
| 236 | 7.9.2 | E5-HU9-T2 - QA: Pruebas worker-home.spec.ts | 0.5d | 2026-11-12 | 2026-11-12 | 233 |  | QA / Tester |
| 237 | 8 | **E6 - Gestión de Jornales, Nómina y Pagos** | 29.5d | 2026-10-28 | 2026-12-08 |  |  |  |
| 238 | 8.1 | **E6-HU1 - Registrar jornal de un trabajador** | 20d | 2026-10-28 | 2026-11-24 |  |  |  |
| 239 | 8.1.1 | E6-HU1-T1 - Backend: Implementar POST /api/jornales (JornalController, JornalService) | 2d | 2026-11-23 | 2026-11-24 | 231 |  | Desarrollador Backend |
| 240 | 8.1.2 | E6-HU1-T2 - Frontend: Construir formulario new-wage | 2d | 2026-10-28 | 2026-10-29 | 235 |  | Desarrollador Frontend |
| 241 | 8.1.3 | E6-HU1-T3 - QA: Pruebas JornalServiceTest y new-wage.spec.ts | 2d | 2026-11-12 | 2026-11-16 | 236 | start no later than 2026-11-12 | QA / Tester |
| 242 | 8.2 | **E6-HU2 - Consultar jornales por trabajador o por cultivo** | 19d | 2026-10-30 | 2026-11-25 |  |  |  |
| 243 | 8.2.1 | E6-HU2-T1 - Backend: Implementar GET /api/jornales/{id}, /trabajador/{id} y /cultivo/{id} | 1d | 2026-11-25 | 2026-11-25 | 239 |  | Desarrollador Backend |
| 244 | 8.2.2 | E6-HU2-T2 - Frontend: Construir vista list-wage con filtros | 1d | 2026-10-30 | 2026-10-30 | 240 |  | Desarrollador Frontend |
| 245 | 8.2.3 | E6-HU2-T3 - QA: Pruebas de consulta de jornales y list-wage.spec.ts | 1d | 2026-11-16 | 2026-11-17 | 241 | start no later than 2026-11-16 | QA / Tester |
| 246 | 8.3 | **E6-HU3 - Asociar y remover actividades de un jornal** | 19d | 2026-11-02 | 2026-11-26 |  |  |  |
| 247 | 8.3.1 | E6-HU3-T1 - Backend: Implementar PATCH y DELETE /api/jornales/{id}/actividades/{actividadId} | 1d | 2026-11-26 | 2026-11-26 | 243 |  | Desarrollador Backend |
| 248 | 8.3.2 | E6-HU3-T2 - Frontend: Permitir gestionar actividades del jornal desde new-wage/list-wage | 1d | 2026-11-02 | 2026-11-02 | 244 |  | Desarrollador Frontend |
| 249 | 8.3.3 | E6-HU3-T3 - QA: Pruebas de asociación/remoción de actividades en jornal | 1d | 2026-11-17 | 2026-11-18 | 245 | start no later than 2026-11-17 | QA / Tester |
| 250 | 8.4 | **E6-HU4 - Generar nómina de un periodo** | 20d | 2026-11-03 | 2026-11-30 |  |  |  |
| 251 | 8.4.1 | E6-HU4-T1 - Backend: Implementar POST /api/nominas/generar (NominaController, NominaService) | 2d | 2026-11-27 | 2026-11-30 | 247 |  | Desarrollador Backend |
| 252 | 8.4.2 | E6-HU4-T2 - Frontend: Habilitar generación de nómina desde el módulo de trabajadores/reportes | 2d | 2026-11-03 | 2026-11-04 | 248 |  | Desarrollador Frontend |
| 253 | 8.4.3 | E6-HU4-T3 - QA: Pruebas NominaServiceTest para el cálculo de nómina | 2d | 2026-11-18 | 2026-11-20 | 249 | start no later than 2026-11-18 | QA / Tester |

Notes:
- 237: Registro de jornales trabajados, generación de nómina y registro de pagos a trabajadores.

| ID | WBS | Task | Duration | Start | Finish | Predecessors | Constraint | Resources |
| --- | --- | --- | --- | --- | --- | --- | --- | --- |
| 254 | 8.5 | **E6-HU5 - Consultar nóminas (listado, detalle y por trabajador)** | 19d | 2026-11-05 | 2026-12-01 |  |  |  |
| 255 | 8.5.1 | E6-HU5-T1 - Backend: Implementar GET /api/nominas, /{id} y /trabajador/{trabajadorId} | 1d | 2026-12-01 | 2026-12-01 | 251 |  | Desarrollador Backend |
| 256 | 8.5.2 | E6-HU5-T2 - Frontend: Mostrar listado y detalle de nóminas en el módulo de trabajadores | 1d | 2026-11-05 | 2026-11-05 | 252 |  | Desarrollador Frontend |
| 257 | 8.5.3 | E6-HU5-T3 - QA: Pruebas de consulta de nóminas | 1d | 2026-11-20 | 2026-11-23 | 253 | start no later than 2026-11-20 | QA / Tester |
| 258 | 8.6 | **E6-HU6 - Aprobar, anular y reactivar una nómina** | 19d | 2026-11-06 | 2026-12-02 |  |  |  |
| 259 | 8.6.1 | E6-HU6-T1 - Backend: Implementar PATCH /api/nominas/{id}/aprobar, /anular y /reactivar | 1d | 2026-12-02 | 2026-12-02 | 255 |  | Desarrollador Backend |
| 260 | 8.6.2 | E6-HU6-T2 - Frontend: Agregar acciones de cambio de estado de nómina en la UI | 1d | 2026-11-06 | 2026-11-06 | 256 |  | Desarrollador Frontend |
| 261 | 8.6.3 | E6-HU6-T3 - QA: Pruebas NominaTest (dominio) para las transiciones de EstadoNomina | 1d | 2026-11-23 | 2026-11-24 | 257 | start no later than 2026-11-23 | QA / Tester |
| 262 | 8.7 | **E6-HU7 - Eliminar una nómina** | 7d | 2026-11-24 | 2026-12-03 |  | start no later than 2026-11-24 |  |
| 263 | 8.7.1 | E6-HU7-T1 - Backend: Implementar DELETE /api/nominas/{id} | 0.5d | 2026-12-03 | 2026-12-03 | 259 |  | Desarrollador Backend |
| 264 | 8.7.2 | E6-HU7-T2 - QA: Pruebas de eliminación e integridad de nómina | 0.5d | 2026-11-24 | 2026-11-24 | 261 | start no later than 2026-11-24 | QA / Tester |
| 265 | 8.8 | **E6-HU8 - Registrar pago a un trabajador** | 20.5d | 2026-11-09 | 2026-12-07 |  |  |  |
| 266 | 8.8.1 | E6-HU8-T1 - Backend: Implementar POST /api/pagos (PagoController, PagoService) | 2d | 2026-12-03 | 2026-12-07 | 263 | start no later than 2026-12-03 | Desarrollador Backend |
| 267 | 8.8.2 | E6-HU8-T2 - Frontend: Habilitar registro de pago desde list-payment | 2d | 2026-11-09 | 2026-11-10 | 260 |  | Desarrollador Frontend |
| 268 | 8.8.3 | E6-HU8-T3 - QA: Pruebas PagoServiceTest | 2d | 2026-11-25 | 2026-11-26 | 264 |  | QA / Tester |
| 269 | 8.9 | **E6-HU9 - Consultar pagos (listado, detalle y por trabajador)** | 19.5d | 2026-11-11 | 2026-12-08 |  |  |  |
| 270 | 8.9.1 | E6-HU9-T1 - Backend: Implementar GET /api/pagos, /{id} y /trabajador/{trabajadorId} | 1d | 2026-12-07 | 2026-12-08 | 266 | start no later than 2026-12-07 | Desarrollador Backend |
| 271 | 8.9.2 | E6-HU9-T2 - Frontend: Construir vista list-payment | 1d | 2026-11-11 | 2026-11-11 | 267 |  | Desarrollador Frontend |
| 272 | 8.9.3 | E6-HU9-T3 - QA: Pruebas PagoControllerTest y list-payment.spec.ts | 1d | 2026-11-27 | 2026-11-27 | 268 |  | QA / Tester |
| 273 | 9 | **E8 - Clima y Panel Principal** | 21d | 2026-11-12 | 2026-12-10 |  |  |  |
| 274 | 9.1 | **E8-HU1 - Consultar clima actual por coordenadas** | 8.5d | 2026-11-30 | 2026-12-10 |  |  |  |
| 275 | 9.1.1 | E8-HU1-T1 - Backend: Implementar GET /api/v1/weather/coordinates (WeatherController, WeatherService, OpenWeatherAdapter) | 1d | 2026-12-08 | 2026-12-09 | 270 | start no later than 2026-12-08 | Desarrollador Backend |
| 276 | 9.1.2 | E8-HU1-T2 - Backend: Manejar errores de la API externa (ExternalApiException) | 1d | 2026-12-09 | 2026-12-10 | 275 | start no later than 2026-12-09 | Desarrollador Backend |
| 277 | 9.1.3 | E8-HU1-T3 - QA: Pruebas WeatherServiceTest y OpenWeatherAdapterTest | 1d | 2026-11-30 | 2026-11-30 | 272 |  | QA / Tester |

Notes:
- 273: Consulta del clima para la finca y panel/dashboard de navegación general de la aplicación.

| ID | WBS | Task | Duration | Start | Finish | Predecessors | Constraint | Resources |
| --- | --- | --- | --- | --- | --- | --- | --- | --- |
| 278 | 9.2 | **E8-HU2 - Consultar clima actual por nombre de ciudad** | 8d | 2026-12-01 | 2026-12-10 |  |  |  |
| 279 | 9.2.1 | E8-HU2-T1 - Backend: Implementar GET /api/v1/weather/city | 0.5d | 2026-12-10 | 2026-12-10 | 276 | start no later than 2026-12-10 | Desarrollador Backend |
| 280 | 9.2.2 | E8-HU2-T2 - QA: Pruebas WeatherControllerTest para consulta por ciudad | 0.5d | 2026-12-01 | 2026-12-01 | 277 |  | QA / Tester |
| 281 | 9.3 | **E8-HU3 - Mostrar widget de clima en el panel principal** | 14.5d | 2026-11-12 | 2026-12-02 |  |  |  |
| 282 | 9.3.1 | E8-HU3-T1 - Frontend: Construir weather-widget.component consumiendo weather.service.ts | 1d | 2026-11-12 | 2026-11-12 | 271 |  | Desarrollador Frontend |
| 283 | 9.3.2 | E8-HU3-T2 - Frontend: Integrar weather-widget en el dashboard | 1d | 2026-11-13 | 2026-11-13 | 282 |  | Desarrollador Frontend |
| 284 | 9.3.3 | E8-HU3-T3 - QA: Pruebas weather.service.spec.ts | 1d | 2026-12-01 | 2026-12-02 | 280 | start no later than 2026-12-01 | QA / Tester |
| 285 | 9.4 | **E8-HU4 - Panel principal (dashboard) con resumen de la operación** | 14.5d | 2026-11-16 | 2026-12-04 |  |  |  |
| 286 | 9.4.1 | E8-HU4-T1 - Frontend: Construir dashboard.html/ts con los indicadores/resúmenes principales | 2d | 2026-11-16 | 2026-11-17 | 283 |  | Desarrollador Frontend |
| 287 | 9.4.2 | E8-HU4-T2 - Frontend: Configurar app.routes.ts para redirigir al dashboard tras login | 2d | 2026-11-18 | 2026-11-19 | 286 |  | Desarrollador Frontend |
| 288 | 9.4.3 | E8-HU4-T3 - QA: Pruebas dashboard.spec.ts | 2d | 2026-12-02 | 2026-12-04 | 284 | start no later than 2026-12-02 | QA / Tester |
| 289 | 9.5 | **E8-HU5 - Navegación general de la aplicación** | 11.5d | 2026-11-20 | 2026-12-07 |  |  |  |
| 290 | 9.5.1 | E8-HU5-T1 - Frontend: Construir layout.html/ts con menú de navegación | 1d | 2026-11-20 | 2026-11-20 | 287 |  | Desarrollador Frontend |
| 291 | 9.5.2 | E8-HU5-T2 - Frontend: Integrar layout como contenedor de rutas protegidas en app.routes.ts | 1d | 2026-11-23 | 2026-11-23 | 290 |  | Desarrollador Frontend |
| 292 | 9.5.3 | E8-HU5-T3 - QA: Pruebas de navegación general | 1d | 2026-12-04 | 2026-12-07 | 288 | start no later than 2026-12-04 | QA / Tester |
