# AgroRuta - Plan de Proyecto

Schedule from MS Project XML.
AgroRuta

## Calendars

- Estandar: Mon-Fri 08:00-12:00, 13:00-17:00; Sat-Sun off.

## Resources

| Resource | Rate |
| --- | --- |
| Project Manager |  |
| Desarrollador Backend | 25000 |
| Desarrollador Frontend | 22000 |
| QA / Tester | 18000 |

## Schedule

| ID | WBS | Task | Duration | Predecessors | Resources | Work |
| --- | --- | --- | --- | --- | --- | --- |
| 1 | 0 | **AgroRuta - Plan de Proyecto (Presupuesto Hipotetico)** |  |  |  |  |
| 2 | 1 | **E2 - Gestión de Fincas y Lotes** |  |  |  |  |
| 3 | 1.1 | **E2-HU1 - Registrar una nueva finca** |  |  |  |  |
| 4 | 1.1.1 | E2-HU1-T1 - Backend: Implementar POST /api/fincas (FincaController, FincaService) | 2d |  | Desarrollador Backend | 16h |
| 5 | 1.1.2 | E2-HU1-T2 - Frontend: Construir formulario nueva-finca (nueva-finca.html/ts) | 2d |  | Desarrollador Frontend | 16h |
| 6 | 1.1.3 | E2-HU1-T3 - QA: Pruebas FincaServiceTest, FincaControllerTest y nueva-finca.spec.ts | 2d |  | QA / Tester | 16h |
| 7 | 1.2 | **E2-HU2 - Listar fincas del agricultor** |  |  |  |  |
| 8 | 1.2.1 | E2-HU2-T1 - Backend: Implementar GET /api/fincas/agricultor/{agricultorId} | 2d | 4 | Desarrollador Backend | 16h |
| 9 | 1.2.2 | E2-HU2-T2 - Frontend: Construir vista lista-fincas (lista-fincas.html/ts) | 2d | 5 | Desarrollador Frontend | 16h |
| 10 | 1.2.3 | E2-HU2-T3 - QA: Pruebas de listado en FincaControllerTest y lista-fincas.spec.ts | 2d | 6 | QA / Tester | 16h |
| 11 | 1.3 | **E2-HU3 - Ver detalle de una finca** |  |  |  |  |
| 12 | 1.3.1 | E2-HU3-T1 - Backend: Implementar GET /api/fincas/{id} | 1d | 8 | Desarrollador Backend | 8h |
| 13 | 1.3.2 | E2-HU3-T2 - Frontend: Construir vista detalle-finca con integración de mapa | 1d | 9 | Desarrollador Frontend | 8h |
| 14 | 1.3.3 | E2-HU3-T3 - QA: Pruebas detalle-finca.spec.ts | 1d | 10 | QA / Tester | 8h |
| 15 | 1.4 | **E2-HU4 - Actualizar geolocalización (centroide) de la finca** |  |  |  |  |
| 16 | 1.4.1 | E2-HU4-T1 - Backend: Implementar PATCH /api/fincas/{id}/centroide (ActualizarCentroideFincaRequest) | 1d | 12 | Desarrollador Backend | 8h |
| 17 | 1.4.2 | E2-HU4-T2 - Frontend: Implementar selector de ubicación en el mapa dentro de detalle-finca | 1d | 13 | Desarrollador Frontend | 8h |
| 18 | 1.4.3 | E2-HU4-T3 - QA: Pruebas del endpoint y del flujo de actualización de centroide | 1d | 14 | QA / Tester | 8h |
| 19 | 1.5 | **E2-HU5 - Eliminar una finca** |  |  |  |  |
| 20 | 1.5.1 | E2-HU5-T1 - Backend: Implementar DELETE /api/fincas/{id} | 0.5d | 16 | Desarrollador Backend | 4h |
| 21 | 1.5.2 | E2-HU5-T2 - Frontend: Agregar acción de eliminar en lista-fincas con modal de confirmación | 0.5d | 17 | Desarrollador Frontend | 4h |
| 22 | 1.5.3 | E2-HU5-T3 - QA: Pruebas de eliminación en FincaControllerTest | 0.5d | 18 | QA / Tester | 4h |
| 23 | 1.6 | **E2-HU6 - Registrar un nuevo lote en una finca** |  |  |  |  |
| 24 | 1.6.1 | E2-HU6-T1 - Backend: Implementar POST /api/lotes (LoteController, LoteService) | 2d | 20 | Desarrollador Backend | 16h |
| 25 | 1.6.2 | E2-HU6-T2 - Frontend: Construir formulario nuevo-lote | 2d | 21 | Desarrollador Frontend | 16h |
| 26 | 1.6.3 | E2-HU6-T3 - QA: Pruebas LoteServiceTest y nuevo-lote.spec.ts | 2d | 22 | QA / Tester | 16h |

Notes:
- 2: Registro y administración de fincas (con geolocalización) y de los lotes que las componen.

| ID | WBS | Task | Duration | Predecessors | Resources | Work |
| --- | --- | --- | --- | --- | --- | --- |
| 27 | 1.7 | **E2-HU7 - Consultar lotes de una finca y ver su detalle** |  |  |  |  |
| 28 | 1.7.1 | E2-HU7-T1 - Backend: Implementar GET /api/lotes/finca/{fincaId} y GET /api/lotes/{id} | 1d | 24 | Desarrollador Backend | 8h |
| 29 | 1.7.2 | E2-HU7-T2 - Frontend: Construir vista detalle-lote | 1d | 25 | Desarrollador Frontend | 8h |
| 30 | 1.7.3 | E2-HU7-T3 - QA: Pruebas detalle-lote.spec.ts | 1d | 26 | QA / Tester | 8h |
| 31 | 1.8 | **E2-HU8 - Actualizar geometría (polígono) del lote** |  |  |  |  |
| 32 | 1.8.1 | E2-HU8-T1 - Backend: Implementar PATCH /api/lotes/{id}/geometria (ActualizarGeometriaLoteRequest) | 1d | 28 | Desarrollador Backend | 8h |
| 33 | 1.8.2 | E2-HU8-T2 - Frontend: Implementar editor de polígono en el mapa dentro de detalle-lote | 1d | 29 | Desarrollador Frontend | 8h |
| 34 | 1.8.3 | E2-HU8-T3 - QA: Pruebas del endpoint de actualización de geometría | 1d | 30 | QA / Tester | 8h |
| 35 | 1.9 | **E2-HU9 - Eliminar un lote** |  |  |  |  |
| 36 | 1.9.1 | E2-HU9-T1 - Backend: Implementar DELETE /api/lotes/{id} | 0.5d | 32 | Desarrollador Backend | 4h |
| 37 | 1.9.2 | E2-HU9-T2 - Frontend: Agregar acción de eliminar lote con confirmación | 0.5d | 33 | Desarrollador Frontend | 4h |
| 38 | 1.9.3 | E2-HU9-T3 - QA: Pruebas de eliminación de lote | 0.5d | 34 | QA / Tester | 4h |
| 39 | 2 | **E4 - Gestión de Insumos Agrícolas** |  |  |  |  |
| 40 | 2.1 | **E4-HU1 - Registrar un nuevo insumo agrícola** |  |  |  |  |
| 41 | 2.1.1 | E4-HU1-T1 - Backend: Implementar POST /api/agricultural-inputs (AgriculturalInputController, AgriculturalInputService) | 1d | 36 | Desarrollador Backend | 8h |
| 42 | 2.1.2 | E4-HU1-T2 - QA: Pruebas AgriculturalInputServiceTest y AgriculturalInputControllerTest | 1d | 38 | QA / Tester | 8h |
| 43 | 2.2 | **E4-HU2 - Listar y buscar insumos agrícolas** |  |  |  |  |
| 44 | 2.2.1 | E4-HU2-T1 - Backend: Implementar GET /api/agricultural-inputs y lógica de búsqueda (SearchAgriculturalInputsUseCase) | 1d | 41 | Desarrollador Backend | 8h |
| 45 | 2.2.2 | E4-HU2-T2 - QA: Pruebas de listado y búsqueda de insumos | 1d | 42 | QA / Tester | 8h |
| 46 | 2.3 | **E4-HU3 - Ver detalle de un insumo agrícola** |  |  |  |  |
| 47 | 2.3.1 | E4-HU3-T1 - Backend: Implementar GET /api/agricultural-inputs/{id} (GetAgriculturalInputByIdUseCase) | 0.5d | 44 | Desarrollador Backend | 4h |
| 48 | 2.3.2 | E4-HU3-T2 - QA: Pruebas de consulta por ID, incluyendo caso no encontrado | 0.5d | 45 | QA / Tester | 4h |
| 49 | 2.4 | **E4-HU4 - Actualizar un insumo agrícola** |  |  |  |  |
| 50 | 2.4.1 | E4-HU4-T1 - Backend: Implementar PUT /api/agricultural-inputs/{id} (UpdateAgriculturalInputUseCase) | 0.5d | 47 | Desarrollador Backend | 4h |
| 51 | 2.4.2 | E4-HU4-T2 - QA: Pruebas de actualización de insumo | 0.5d | 48 | QA / Tester | 4h |

Notes:
- 39: Catálogo de insumos agrícolas (agroquímicos, fertilizantes, etc.) usados en las labores de cultivo.

| ID | WBS | Task | Duration | Predecessors | Resources | Work |
| --- | --- | --- | --- | --- | --- | --- |
| 52 | 2.5 | **E4-HU5 - Eliminar un insumo agrícola** |  |  |  |  |
| 53 | 2.5.1 | E4-HU5-T1 - Backend: Implementar DELETE /api/agricultural-inputs/{id} (DeleteAgriculturalInputUseCase) | 0.5d | 50 | Desarrollador Backend | 4h |
| 54 | 2.5.2 | E4-HU5-T2 - QA: Pruebas de eliminación e integridad referencial | 0.5d | 51 | QA / Tester | 4h |
| 55 | 2.6 | **E4-HU6 - Precargar catálogo inicial de insumos agrícolas** |  |  |  |  |
| 56 | 2.6.1 | E4-HU6-T1 - Backend: Crear migración Flyway V2__seed_agricultural_inputs.sql con datos base | 1d | 53 | Desarrollador Backend | 8h |
| 57 | 2.6.2 | E4-HU6-T2 - QA: Verificar aplicación correcta de la migración en entorno limpio | 1d | 54 | QA / Tester | 8h |
| 58 | 2.7 | **E4-HU7 - Seleccionar insumo agrícola al registrar una fumigación** |  |  |  |  |
| 59 | 2.7.1 | E4-HU7-T1 - Frontend: Integrar AgriculturalInput.service.ts en el formulario registrar-fumigacion | 1d | 37 | Desarrollador Frontend | 8h |
| 60 | 2.7.2 | E4-HU7-T2 - QA: Pruebas de integración del selector de insumos en registrar-fumigacion.spec.ts | 1d | 57 | QA / Tester | 8h |
| 61 | 3 | **E1 - Autenticación y Gestión de Cuenta** |  |  |  |  |
| 62 | 3.1 | **E1-HU1 - Registro de nuevo usuario** |  |  |  |  |
| 63 | 3.1.1 | E1-HU1-T1 - Backend: Implementar endpoint POST /api/auth/registro (AuthController, AuthService, RegistrarUsuarioUseCase) | 2d | 56 | Desarrollador Backend | 16h |
| 64 | 3.1.2 | E1-HU1-T2 - Backend: Validar unicidad de correo y encriptar contraseña (BCrypt) | 2d | 63 | Desarrollador Backend | 16h |
| 65 | 3.1.3 | E1-HU1-T3 - Frontend: Construir formulario de registro (registro.html/registro.ts) con validaciones reactivas | 2d | 59 | Desarrollador Frontend | 16h |
| 66 | 3.1.4 | E1-HU1-T4 - Frontend: Conectar formulario al servicio auth.ts y manejar respuestas de error | 2d | 65 | Desarrollador Frontend | 16h |
| 67 | 3.1.5 | E1-HU1-T5 - QA: Pruebas unitarias AuthServiceTest, UserServiceTest y registro.spec.ts | 2d | 60 | QA / Tester | 16h |
| 68 | 3.2 | **E1-HU2 - Inicio de sesión con JWT** |  |  |  |  |
| 69 | 3.2.1 | E1-HU2-T1 - Backend: Implementar endpoint POST /api/auth/login (AuthController, AuthService) | 2d | 64 | Desarrollador Backend | 16h |
| 70 | 3.2.2 | E1-HU2-T2 - Backend: Generar y firmar JWT (JwtService, JwtTokenAdapter, TokenPort) | 2d | 69 | Desarrollador Backend | 16h |
| 71 | 3.2.3 | E1-HU2-T3 - Backend: Configurar SecurityConfig y AuthProviderConfig | 2d | 70 | Desarrollador Backend | 16h |
| 72 | 3.2.4 | E1-HU2-T4 - Frontend: Construir formulario de login (login.html/login.ts) | 2d | 66 | Desarrollador Frontend | 16h |
| 73 | 3.2.5 | E1-HU2-T5 - Frontend: Implementar jwt-interceptor.ts para adjuntar el token a las peticiones salientes | 2d | 72 | Desarrollador Frontend | 16h |
| 74 | 3.2.6 | E1-HU2-T6 - QA: Pruebas AuthControllerTest, JwtServiceTest y login.spec.ts | 2d | 67 | QA / Tester | 16h |
| 75 | 3.3 | **E1-HU3 - Protección de rutas y autorización por rol** |  |  |  |  |
| 76 | 3.3.1 | E1-HU3-T1 - Backend: Implementar JwtAuthenticationFilter para validar el token en cada request | 2d | 71 | Desarrollador Backend | 16h |
| 77 | 3.3.2 | E1-HU3-T2 - Backend: Definir catálogo de roles (Rol.java) y reglas de autorización por endpoint | 2d | 76 | Desarrollador Backend | 16h |
| 78 | 3.3.3 | E1-HU3-T3 - Frontend: Implementar auth-guard.ts para proteger rutas privadas de Angular | 2d | 73 | Desarrollador Frontend | 16h |
| 79 | 3.3.4 | E1-HU3-T4 - QA: Pruebas JwtAuthenticationFilterTest, SecurityConfigTest y auth-guard.spec.ts | 2d | 74 | QA / Tester | 16h |

Notes:
- 61: Registro, inicio de sesión, seguridad JWT, perfil de usuario y cambio de contraseña.

| ID | WBS | Task | Duration | Predecessors | Resources | Work |
| --- | --- | --- | --- | --- | --- | --- |
| 80 | 3.4 | **E1-HU4 - Consultar y actualizar perfil de usuario** |  |  |  |  |
| 81 | 3.4.1 | E1-HU4-T1 - Backend: Implementar GET/PUT /api/configuration/perfil (ProfileController, ProfileService) | 1d | 77 | Desarrollador Backend | 8h |
| 82 | 3.4.2 | E1-HU4-T2 - Frontend: Crear página de configuración (configuration-page) | 1d | 78 | Desarrollador Frontend | 8h |
| 83 | 3.4.3 | E1-HU4-T3 - Frontend: Implementar profile-form y conectar con profile.service.ts | 1d | 82 | Desarrollador Frontend | 8h |
| 84 | 3.4.4 | E1-HU4-T4 - QA: Pruebas ProfileServiceTest, ProfileControllerTest y profile-form.component.spec.ts | 1d | 79 | QA / Tester | 8h |
| 85 | 3.5 | **E1-HU5 - Cambiar contraseña** |  |  |  |  |
| 86 | 3.5.1 | E1-HU5-T1 - Backend: Implementar PATCH /api/configuration/perfil/password (ChangePasswordUseCase) | 1d | 81 | Desarrollador Backend | 8h |
| 87 | 3.5.2 | E1-HU5-T2 - Frontend: Construir change-password-form.component | 1d | 83 | Desarrollador Frontend | 8h |
| 88 | 3.5.3 | E1-HU5-T3 - QA: Pruebas del caso de uso y change-password-form.component.spec.ts | 1d | 84 | QA / Tester | 8h |
| 89 | 4 | **E7 - Reportes** |  |  |  |  |
| 90 | 4.1 | **E7-HU1 - Panel principal de reportes** |  |  |  |  |
| 91 | 4.1.1 | E7-HU1-T1 - Frontend: Construir report-home.component con accesos a cada reporte | 0.5d | 87 | Desarrollador Frontend | 4h |
| 92 | 4.1.2 | E7-HU1-T2 - QA: Pruebas de navegación del módulo de reportes | 0.5d | 88 | QA / Tester | 4h |
| 93 | 4.2 | **E7-HU2 - Generar y descargar reporte PDF de producción de cultivos** |  |  |  |  |
| 94 | 4.2.1 | E7-HU2-T1 - Backend: Implementar GET /api/reports/crops (ReportController, GenerateCropReportService, PdfReportService) | 2d | 86 | Desarrollador Backend | 16h |
| 95 | 4.2.2 | E7-HU2-T2 - Frontend: Construir crop-report.component con botón de descarga de PDF | 2d | 91 | Desarrollador Frontend | 16h |
| 96 | 4.2.3 | E7-HU2-T3 - QA: Pruebas GenerateCropReportServiceTest y PdfReportServiceTest | 2d | 92 | QA / Tester | 16h |
| 97 | 4.3 | **E7-HU3 - Vista previa del reporte de cultivos** |  |  |  |  |
| 98 | 4.3.1 | E7-HU3-T1 - Backend: Implementar GET /api/reports/crops/preview | 1d | 94 | Desarrollador Backend | 8h |
| 99 | 4.3.2 | E7-HU3-T2 - Frontend: Mostrar vista previa de datos en crop-report.component | 1d | 95 | Desarrollador Frontend | 8h |
| 100 | 4.3.3 | E7-HU3-T3 - QA: Pruebas de la vista previa del reporte de cultivos | 1d | 96 | QA / Tester | 8h |
| 101 | 4.4 | **E7-HU4 - Generar y descargar reporte PDF de nómina** |  |  |  |  |
| 102 | 4.4.1 | E7-HU4-T1 - Backend: Implementar GET /api/reports/payroll (GeneratePayrollReportService) | 2d | 98 | Desarrollador Backend | 16h |
| 103 | 4.4.2 | E7-HU4-T2 - Frontend: Construir payroll-report.component con botón de descarga de PDF | 2d | 99 | Desarrollador Frontend | 16h |
| 104 | 4.4.3 | E7-HU4-T3 - QA: Pruebas GeneratePayrollReportServiceTest | 2d | 100 | QA / Tester | 16h |

Notes:
- 89: Generación de reportes en PDF de producción de cultivos y de nómina/pagos.

| ID | WBS | Task | Duration | Predecessors | Resources | Work |
| --- | --- | --- | --- | --- | --- | --- |
| 105 | 4.5 | **E7-HU5 - Vista previa del reporte de nómina** |  |  |  |  |
| 106 | 4.5.1 | E7-HU5-T1 - Backend: Implementar GET /api/reports/payroll/preview | 1d | 102 | Desarrollador Backend | 8h |
| 107 | 4.5.2 | E7-HU5-T2 - Frontend: Mostrar vista previa de datos en payroll-report.component | 1d | 103 | Desarrollador Frontend | 8h |
| 108 | 4.5.3 | E7-HU5-T3 - QA: Pruebas de la vista previa del reporte de nómina | 1d | 104 | QA / Tester | 8h |
| 109 | 5 | **E9 - Infraestructura, Seguridad y Calidad** |  |  |  |  |
| 110 | 5.1 | **E9-HU1 - Manejo global de excepciones en el backend** |  |  |  |  |
| 111 | 5.1.1 | E9-HU1-T1 - Backend: Implementar GlobalExceptionHandler, ErrorCode y ErrorResponse | 2d | 106 | Desarrollador Backend | 16h |
| 112 | 5.1.2 | E9-HU1-T2 - Backend: Definir BusinessException, ResourceNotFoundException y ExternalApiException | 2d | 111 | Desarrollador Backend | 16h |
| 113 | 5.1.3 | E9-HU1-T3 - QA: Pruebas GlobalExceptionHandlerTest y de cada excepción | 2d | 108 | QA / Tester | 16h |
| 114 | 5.2 | **E9-HU2 - Logging estructurado y trazabilidad de peticiones** |  |  |  |  |
| 115 | 5.2.1 | E9-HU2-T1 - Backend: Implementar RequestLoggingFilter y MdcKeys | 1d | 112 | Desarrollador Backend | 8h |
| 116 | 5.2.2 | E9-HU2-T2 - Backend: Implementar LoggingAspect para trazabilidad de métodos clave | 1d | 115 | Desarrollador Backend | 8h |
| 117 | 5.2.3 | E9-HU2-T3 - Backend: Configurar logback-spring.xml (rotación diaria de logs de error y aplicación) | 1d | 116 | Desarrollador Backend | 8h |
| 118 | 5.2.4 | E9-HU2-T4 - QA: Verificación manual de logs generados en distintos escenarios | 1d | 113 | QA / Tester | 8h |
| 119 | 5.3 | **E9-HU3 - Configuración de CORS** |  |  |  |  |
| 120 | 5.3.1 | E9-HU3-T1 - Backend: Implementar CorsConfig | 2d | 117 | Desarrollador Backend | 16h |
| 121 | 5.3.2 | E9-HU3-T2 - QA: Pruebas CorsConfigTest | 2d | 118 | QA / Tester | 16h |
| 122 | 5.4 | **E9-HU4 - Documentación de la API con OpenAPI/Swagger** |  |  |  |  |
| 123 | 5.4.1 | E9-HU4-T1 - Backend: Implementar OpenApiConfig | 1d | 120 | Desarrollador Backend | 8h |
| 124 | 5.4.2 | E9-HU4-T2 - QA: Pruebas OpenApiConfigTest y verificación manual de la documentación generada | 1d | 121 | QA / Tester | 8h |
| 125 | 5.5 | **E9-HU5 - Gestión de migraciones de base de datos** |  |  |  |  |
| 126 | 5.5.1 | E9-HU5-T1 - Backend: Implementar FlywayConfig | 2d | 123 | Desarrollador Backend | 16h |
| 127 | 5.5.2 | E9-HU5-T2 - Backend: Mantener migraciones versionadas (incluye V2__seed_agricultural_inputs.sql) | 2d | 126 | Desarrollador Backend | 16h |
| 128 | 5.5.3 | E9-HU5-T3 - QA: Pruebas FlywayConfigTest y validación en entorno limpio | 2d | 124 | QA / Tester | 16h |

Notes:
- 109: Requisitos no funcionales: manejo de errores, logging, CORS, documentación de API, migraciones de BD, Docker, calidad de código y pruebas E2E.

| ID | WBS | Task | Duration | Predecessors | Resources | Work |
| --- | --- | --- | --- | --- | --- | --- |
| 129 | 5.6 | **E9-HU6 - Contenerización y despliegue del backend** |  |  |  |  |
| 130 | 5.6.1 | E9-HU6-T1 - Backend: Crear/mantener Dockerfile del backend | 1d | 127 | Desarrollador Backend | 8h |
| 131 | 5.6.2 | E9-HU6-T2 - Backend: Crear/mantener docker-compose.yml con los servicios necesarios | 1d | 130 | Desarrollador Backend | 8h |
| 132 | 5.6.3 | E9-HU6-T3 - QA: Verificar build y levantamiento del contenedor en limpio | 1d | 128 | QA / Tester | 8h |
| 133 | 5.7 | **E9-HU7 - Contenerización y despliegue del frontend** |  |  |  |  |
| 134 | 5.7.1 | E9-HU7-T1 - Frontend: Crear/mantener Dockerfile del frontend | 1d | 107 | Desarrollador Frontend | 8h |
| 135 | 5.7.2 | E9-HU7-T2 - Frontend: Configurar nginx.conf para servir la SPA y manejar rutas | 1d | 134 | Desarrollador Frontend | 8h |
| 136 | 5.7.3 | E9-HU7-T3 - QA: Verificar build y despliegue del contenedor en limpio | 1d | 132 | QA / Tester | 8h |
| 137 | 5.8 | **E9-HU8 - Análisis de calidad de código** |  |  |  |  |
| 138 | 5.8.1 | E9-HU8-T1 - Backend: Configurar sonar-project.properties y ejecutar análisis | 0.5d | 131 | Desarrollador Backend | 4h |
| 139 | 5.8.2 | E9-HU8-T2 - Frontend: Configurar sonar-project.properties y ejecutar análisis | 0.5d | 135 | Desarrollador Frontend | 4h |
| 140 | 5.8.3 | E9-HU8-T3 - QA: Revisar y priorizar hallazgos críticos del análisis | 0.5d | 136 | QA / Tester | 4h |
| 141 | 5.9 | **E9-HU9 - Manejo global de errores en el frontend** |  |  |  |  |
| 142 | 5.9.1 | E9-HU9-T1 - Frontend: Implementar error.handler.ts | 1d | 139 | Desarrollador Frontend | 8h |
| 143 | 5.9.2 | E9-HU9-T2 - QA: Pruebas error.handler.spec.ts | 1d | 140 | QA / Tester | 8h |
| 144 | 5.10 | **E9-HU10 - Interceptor de logging en el frontend** |  |  |  |  |
| 145 | 5.10.1 | E9-HU10-T1 - Frontend: Implementar logging.interceptor.ts y logging.service.ts | 0.5d | 142 | Desarrollador Frontend | 4h |
| 146 | 5.10.2 | E9-HU10-T2 - QA: Pruebas logging.interceptor.spec.ts y logging.service.spec.ts | 0.5d | 143 | QA / Tester | 4h |
| 147 | 5.11 | **E9-HU11 - Pruebas end-to-end (E2E) de los flujos principales** |  |  |  |  |
| 148 | 5.11.1 | E9-HU11-T1 - QA: Implementar/mantener e2e configuracion.spec.ts | 1d | 146 | QA / Tester | 8h |
| 149 | 5.11.2 | E9-HU11-T2 - QA: Implementar/mantener e2e reportes.spec.ts | 1d | 148 | QA / Tester | 8h |
| 150 | 5.11.3 | E9-HU11-T3 - QA: Implementar/mantener e2e workers.spec.ts | 1d | 149 | QA / Tester | 8h |
| 151 | 5.11.4 | E9-HU11-T4 - QA: Configurar playwright.config.ts para ejecución en pipeline | 1d | 150 | QA / Tester | 8h |
| 152 | 5.12 | **E9-HU12 - Configuración de variables de entorno por ambiente** |  |  |  |  |
| 153 | 5.12.1 | E9-HU12-T1 - Backend: Mantener .env.example y application-prod.yml | 1d | 138 | Desarrollador Backend | 8h |
| 154 | 5.12.2 | E9-HU12-T2 - Frontend: Mantener environment.ts, environment.development.ts y environment.prod.ts | 1d | 145 | Desarrollador Frontend | 8h |
| 155 | 5.12.3 | E9-HU12-T3 - QA: Verificar que no se versionan credenciales reales | 1d | 151 | QA / Tester | 8h |

| ID | WBS | Task | Duration | Predecessors | Resources | Work |
| --- | --- | --- | --- | --- | --- | --- |
| 156 | 6 | **E3 - Gestión del Ciclo de Cultivo** |  |  |  |  |
| 157 | 6.1 | **E3-HU1 - Registrar una nueva siembra** |  |  |  |  |
| 158 | 6.1.1 | E3-HU1-T1 - Backend: Implementar POST /api/siembras (SiembraController, SiembraService) | 2d | 153 | Desarrollador Backend | 16h |
| 159 | 6.1.2 | E3-HU1-T2 - Frontend: Construir formulario nueva-siembra | 2d | 154 | Desarrollador Frontend | 16h |
| 160 | 6.1.3 | E3-HU1-T3 - QA: Pruebas SiembraServiceTest y nueva-siembra.spec.ts | 2d | 155 | QA / Tester | 16h |
| 161 | 6.2 | **E3-HU2 - Listar cultivos/siembras por lote o por estado** |  |  |  |  |
| 162 | 6.2.1 | E3-HU2-T1 - Backend: Implementar GET /api/siembras/lote/{loteId} y GET /api/siembras/estado/{estado} | 2d | 158 | Desarrollador Backend | 16h |
| 163 | 6.2.2 | E3-HU2-T2 - Frontend: Construir vista lista-cultivos con filtro por estado | 2d | 159 | Desarrollador Frontend | 16h |
| 164 | 6.2.3 | E3-HU2-T3 - QA: Pruebas de listado y filtrado | 2d | 160 | QA / Tester | 16h |
| 165 | 6.3 | **E3-HU3 - Ver detalle de una siembra** |  |  |  |  |
| 166 | 6.3.1 | E3-HU3-T1 - Backend: Implementar GET /api/siembras/{id} | 1d | 162 | Desarrollador Backend | 8h |
| 167 | 6.3.2 | E3-HU3-T2 - Frontend: Construir vista detalle-siembra | 1d | 163 | Desarrollador Frontend | 8h |
| 168 | 6.3.3 | E3-HU3-T3 - QA: Pruebas detalle-siembra.spec.ts | 1d | 164 | QA / Tester | 8h |
| 169 | 6.4 | **E3-HU4 - Avanzar etapa del cultivo** |  |  |  |  |
| 170 | 6.4.1 | E3-HU4-T1 - Backend: Implementar PUT /api/siembras/{id}/avanzar-etapa y reglas de transición de EstadoCultivo | 1d | 166 | Desarrollador Backend | 8h |
| 171 | 6.4.2 | E3-HU4-T2 - Frontend: Agregar acción 'avanzar etapa' en detalle-siembra | 1d | 167 | Desarrollador Frontend | 8h |
| 172 | 6.4.3 | E3-HU4-T3 - QA: Pruebas SiembraTest (dominio) y SiembraControllerTest | 1d | 168 | QA / Tester | 8h |
| 173 | 6.5 | **E3-HU5 - Eliminar una siembra** |  |  |  |  |
| 174 | 6.5.1 | E3-HU5-T1 - Backend: Implementar DELETE /api/siembras/{id} | 0.5d | 170 | Desarrollador Backend | 4h |
| 175 | 6.5.2 | E3-HU5-T2 - Frontend: Agregar acción de eliminar siembra con confirmación | 0.5d | 171 | Desarrollador Frontend | 4h |
| 176 | 6.5.3 | E3-HU5-T3 - QA: Pruebas de eliminación de siembra | 0.5d | 172 | QA / Tester | 4h |
| 177 | 6.6 | **E3-HU6 - Registrar actividad de cultivo** |  |  |  |  |
| 178 | 6.6.1 | E3-HU6-T1 - Backend: Implementar POST /api/actividades (ActividadCultivoController, ActividadCultivoService) | 2d | 174 | Desarrollador Backend | 16h |
| 179 | 6.6.2 | E3-HU6-T2 - Frontend: Construir formulario registrar-actividad | 2d | 175 | Desarrollador Frontend | 16h |
| 180 | 6.6.3 | E3-HU6-T3 - QA: Pruebas ActividadCultivoServiceTest y registrar-actividad.spec.ts | 2d | 176 | QA / Tester | 16h |

Notes:
- 156: Registro de siembras, actividades de cultivo, fumigaciones y cosechas de uchuva.

| ID | WBS | Task | Duration | Predecessors | Resources | Work |
| --- | --- | --- | --- | --- | --- | --- |
| 181 | 6.7 | **E3-HU7 - Consultar actividades de una siembra** |  |  |  |  |
| 182 | 6.7.1 | E3-HU7-T1 - Backend: Implementar GET /api/actividades/siembra/{siembraId} | 1d | 178 | Desarrollador Backend | 8h |
| 183 | 6.7.2 | E3-HU7-T2 - Frontend: Mostrar historial de actividades en detalle-siembra | 1d | 179 | Desarrollador Frontend | 8h |
| 184 | 6.7.3 | E3-HU7-T3 - QA: Pruebas de consulta de actividades | 1d | 180 | QA / Tester | 8h |
| 185 | 6.8 | **E3-HU8 - Registrar fumigación con insumo utilizado** |  |  |  |  |
| 186 | 6.8.1 | E3-HU8-T1 - Backend: Implementar POST /api/fumigaciones (FumigacionController, FumigacionService, RegistrarFumigacionRequest) | 2d | 182 | Desarrollador Backend | 16h |
| 187 | 6.8.2 | E3-HU8-T2 - Frontend: Construir formulario registrar-fumigacion con selector de insumo agrícola | 2d | 183 | Desarrollador Frontend | 16h |
| 188 | 6.8.3 | E3-HU8-T3 - QA: Pruebas FumigacionServiceTest y registrar-fumigacion.spec.ts | 2d | 184 | QA / Tester | 16h |
| 189 | 6.9 | **E3-HU9 - Consultar fumigaciones de una siembra** |  |  |  |  |
| 190 | 6.9.1 | E3-HU9-T1 - Backend: Implementar GET /api/fumigaciones/siembra/{siembraId} | 1d | 186 | Desarrollador Backend | 8h |
| 191 | 6.9.2 | E3-HU9-T2 - Frontend: Mostrar historial de fumigaciones en detalle-siembra | 1d | 187 | Desarrollador Frontend | 8h |
| 192 | 6.9.3 | E3-HU9-T3 - QA: Pruebas de consulta de fumigaciones | 1d | 188 | QA / Tester | 8h |
| 193 | 6.10 | **E3-HU10 - Registrar cosecha** |  |  |  |  |
| 194 | 6.10.1 | E3-HU10-T1 - Backend: Implementar POST /api/cosechas (CosechaController, CosechaService) | 2d | 190 | Desarrollador Backend | 16h |
| 195 | 6.10.2 | E3-HU10-T2 - Frontend: Construir formulario registrar-cosecha | 2d | 191 | Desarrollador Frontend | 16h |
| 196 | 6.10.3 | E3-HU10-T3 - QA: Pruebas CosechaServiceTest y registrar-cosecha.spec.ts | 2d | 192 | QA / Tester | 16h |
| 197 | 6.11 | **E3-HU11 - Consultar cosechas y total de kilogramos por siembra** |  |  |  |  |
| 198 | 6.11.1 | E3-HU11-T1 - Backend: Implementar GET /api/cosechas/siembra/{siembraId} y /total-kg | 1d | 194 | Desarrollador Backend | 8h |
| 199 | 6.11.2 | E3-HU11-T2 - Frontend: Mostrar historial y total de cosecha en detalle-siembra | 1d | 195 | Desarrollador Frontend | 8h |
| 200 | 6.11.3 | E3-HU11-T3 - QA: Pruebas de consulta y cálculo de total de kg | 1d | 196 | QA / Tester | 8h |
| 201 | 7 | **E5 - Gestión de Trabajadores y Cargos** |  |  |  |  |
| 202 | 7.1 | **E5-HU1 - Registrar un nuevo trabajador** |  |  |  |  |
| 203 | 7.1.1 | E5-HU1-T1 - Backend: Implementar POST /api/trabajadores (TrabajadorController, TrabajadorService) | 2d | 198 | Desarrollador Backend | 16h |
| 204 | 7.1.2 | E5-HU1-T2 - Frontend: Implementar formulario de registro de trabajador en el módulo de roster | 2d | 199 | Desarrollador Frontend | 16h |
| 205 | 7.1.3 | E5-HU1-T3 - QA: Pruebas TrabajadorServiceTest y TrabajadorControllerTest | 2d | 200 | QA / Tester | 16h |

Notes:
- 201: Administración del personal de la finca: registro, cargos, estados y actividades laborales.

| ID | WBS | Task | Duration | Predecessors | Resources | Work |
| --- | --- | --- | --- | --- | --- | --- |
| 206 | 7.2 | **E5-HU2 - Listar trabajadores (activos y todos)** |  |  |  |  |
| 207 | 7.2.1 | E5-HU2-T1 - Backend: Implementar GET /api/trabajadores y GET /api/trabajadores/todos | 2d | 203 | Desarrollador Backend | 16h |
| 208 | 7.2.2 | E5-HU2-T2 - Frontend: Construir vista list-roster | 2d | 204 | Desarrollador Frontend | 16h |
| 209 | 7.2.3 | E5-HU2-T3 - QA: Pruebas de listado y list-roster.spec.ts | 2d | 205 | QA / Tester | 16h |
| 210 | 7.3 | **E5-HU3 - Ver y editar detalle de un trabajador** |  |  |  |  |
| 211 | 7.3.1 | E5-HU3-T1 - Backend: Implementar GET /api/trabajadores/{id} y PUT /api/trabajadores/{id} | 1d | 207 | Desarrollador Backend | 8h |
| 212 | 7.3.2 | E5-HU3-T2 - Frontend: Construir vista detail-roster con edición de datos | 1d | 208 | Desarrollador Frontend | 8h |
| 213 | 7.3.3 | E5-HU3-T3 - QA: Pruebas detail-roster.spec.ts | 1d | 209 | QA / Tester | 8h |
| 214 | 7.4 | **E5-HU4 - Asignar cargo a un trabajador** |  |  |  |  |
| 215 | 7.4.1 | E5-HU4-T1 - Backend: Implementar PATCH /api/trabajadores/{id}/cargo/{cargoId} | 1d | 211 | Desarrollador Backend | 8h |
| 216 | 7.4.2 | E5-HU4-T2 - Frontend: Agregar acción de asignar cargo en detail-roster | 1d | 212 | Desarrollador Frontend | 8h |
| 217 | 7.4.3 | E5-HU4-T3 - QA: Pruebas de asignación de cargo | 1d | 213 | QA / Tester | 8h |
| 218 | 7.5 | **E5-HU5 - Cambiar estado de un trabajador (desactivar/suspender/reactivar)** |  |  |  |  |
| 219 | 7.5.1 | E5-HU5-T1 - Backend: Implementar PATCH /api/trabajadores/{id}/desactivar, /suspender y /reactivar | 1d | 215 | Desarrollador Backend | 8h |
| 220 | 7.5.2 | E5-HU5-T2 - Frontend: Agregar acciones de cambio de estado en list-roster/detail-roster | 1d | 216 | Desarrollador Frontend | 8h |
| 221 | 7.5.3 | E5-HU5-T3 - QA: Pruebas TrabajadorTest (dominio) para transiciones de estado | 1d | 217 | QA / Tester | 8h |
| 222 | 7.6 | **E5-HU6 - Gestionar cargos (CRUD)** |  |  |  |  |
| 223 | 7.6.1 | E5-HU6-T1 - Backend: Implementar CRUD completo en CargoController (GET, POST, PUT, DELETE /api/cargos) | 1d | 219 | Desarrollador Backend | 8h |
| 224 | 7.6.2 | E5-HU6-T2 - Frontend: Construir vista list-post para gestión de cargos | 1d | 220 | Desarrollador Frontend | 8h |
| 225 | 7.6.3 | E5-HU6-T3 - QA: Pruebas CargoServiceTest y CargoControllerTest | 1d | 221 | QA / Tester | 8h |
| 226 | 7.7 | **E5-HU7 - Registrar actividad laboral de un trabajador** |  |  |  |  |
| 227 | 7.7.1 | E5-HU7-T1 - Backend: Implementar POST /api/worker/actividades (ActividadController, ActividadService) | 1d | 223 | Desarrollador Backend | 8h |
| 228 | 7.7.2 | E5-HU7-T2 - Frontend: Habilitar registro de actividad desde el módulo de trabajadores | 1d | 224 | Desarrollador Frontend | 8h |
| 229 | 7.7.3 | E5-HU7-T3 - QA: Pruebas ActividadServiceTest | 1d | 225 | QA / Tester | 8h |

| ID | WBS | Task | Duration | Predecessors | Resources | Work |
| --- | --- | --- | --- | --- | --- | --- |
| 230 | 7.8 | **E5-HU8 - Listar, editar y eliminar actividades laborales** |  |  |  |  |
| 231 | 7.8.1 | E5-HU8-T1 - Backend: Implementar GET, PUT y DELETE /api/worker/actividades/{id} | 0.5d | 227 | Desarrollador Backend | 4h |
| 232 | 7.8.2 | E5-HU8-T2 - Frontend: Construir vista list-activities | 0.5d | 228 | Desarrollador Frontend | 4h |
| 233 | 7.8.3 | E5-HU8-T3 - QA: Pruebas ActividadControllerTest y list-activities.spec.ts | 0.5d | 229 | QA / Tester | 4h |
| 234 | 7.9 | **E5-HU9 - Panel principal del módulo de trabajadores** |  |  |  |  |
| 235 | 7.9.1 | E5-HU9-T1 - Frontend: Construir worker-home.html/ts con accesos a los submódulos | 0.5d | 232 | Desarrollador Frontend | 4h |
| 236 | 7.9.2 | E5-HU9-T2 - QA: Pruebas worker-home.spec.ts | 0.5d | 233 | QA / Tester | 4h |
| 237 | 8 | **E6 - Gestión de Jornales, Nómina y Pagos** |  |  |  |  |
| 238 | 8.1 | **E6-HU1 - Registrar jornal de un trabajador** |  |  |  |  |
| 239 | 8.1.1 | E6-HU1-T1 - Backend: Implementar POST /api/jornales (JornalController, JornalService) | 2d | 231 | Desarrollador Backend | 16h |
| 240 | 8.1.2 | E6-HU1-T2 - Frontend: Construir formulario new-wage | 2d | 235 | Desarrollador Frontend | 16h |
| 241 | 8.1.3 | E6-HU1-T3 - QA: Pruebas JornalServiceTest y new-wage.spec.ts | 2d | 236 | QA / Tester | 16h |
| 242 | 8.2 | **E6-HU2 - Consultar jornales por trabajador o por cultivo** |  |  |  |  |
| 243 | 8.2.1 | E6-HU2-T1 - Backend: Implementar GET /api/jornales/{id}, /trabajador/{id} y /cultivo/{id} | 1d | 239 | Desarrollador Backend | 8h |
| 244 | 8.2.2 | E6-HU2-T2 - Frontend: Construir vista list-wage con filtros | 1d | 240 | Desarrollador Frontend | 8h |
| 245 | 8.2.3 | E6-HU2-T3 - QA: Pruebas de consulta de jornales y list-wage.spec.ts | 1d | 241 | QA / Tester | 8h |
| 246 | 8.3 | **E6-HU3 - Asociar y remover actividades de un jornal** |  |  |  |  |
| 247 | 8.3.1 | E6-HU3-T1 - Backend: Implementar PATCH y DELETE /api/jornales/{id}/actividades/{actividadId} | 1d | 243 | Desarrollador Backend | 8h |
| 248 | 8.3.2 | E6-HU3-T2 - Frontend: Permitir gestionar actividades del jornal desde new-wage/list-wage | 1d | 244 | Desarrollador Frontend | 8h |
| 249 | 8.3.3 | E6-HU3-T3 - QA: Pruebas de asociación/remoción de actividades en jornal | 1d | 245 | QA / Tester | 8h |
| 250 | 8.4 | **E6-HU4 - Generar nómina de un periodo** |  |  |  |  |
| 251 | 8.4.1 | E6-HU4-T1 - Backend: Implementar POST /api/nominas/generar (NominaController, NominaService) | 2d | 247 | Desarrollador Backend | 16h |
| 252 | 8.4.2 | E6-HU4-T2 - Frontend: Habilitar generación de nómina desde el módulo de trabajadores/reportes | 2d | 248 | Desarrollador Frontend | 16h |
| 253 | 8.4.3 | E6-HU4-T3 - QA: Pruebas NominaServiceTest para el cálculo de nómina | 2d | 249 | QA / Tester | 16h |

Notes:
- 237: Registro de jornales trabajados, generación de nómina y registro de pagos a trabajadores.

| ID | WBS | Task | Duration | Predecessors | Resources | Work |
| --- | --- | --- | --- | --- | --- | --- |
| 254 | 8.5 | **E6-HU5 - Consultar nóminas (listado, detalle y por trabajador)** |  |  |  |  |
| 255 | 8.5.1 | E6-HU5-T1 - Backend: Implementar GET /api/nominas, /{id} y /trabajador/{trabajadorId} | 1d | 251 | Desarrollador Backend | 8h |
| 256 | 8.5.2 | E6-HU5-T2 - Frontend: Mostrar listado y detalle de nóminas en el módulo de trabajadores | 1d | 252 | Desarrollador Frontend | 8h |
| 257 | 8.5.3 | E6-HU5-T3 - QA: Pruebas de consulta de nóminas | 1d | 253 | QA / Tester | 8h |
| 258 | 8.6 | **E6-HU6 - Aprobar, anular y reactivar una nómina** |  |  |  |  |
| 259 | 8.6.1 | E6-HU6-T1 - Backend: Implementar PATCH /api/nominas/{id}/aprobar, /anular y /reactivar | 1d | 255 | Desarrollador Backend | 8h |
| 260 | 8.6.2 | E6-HU6-T2 - Frontend: Agregar acciones de cambio de estado de nómina en la UI | 1d | 256 | Desarrollador Frontend | 8h |
| 261 | 8.6.3 | E6-HU6-T3 - QA: Pruebas NominaTest (dominio) para las transiciones de EstadoNomina | 1d | 257 | QA / Tester | 8h |
| 262 | 8.7 | **E6-HU7 - Eliminar una nómina** |  |  |  |  |
| 263 | 8.7.1 | E6-HU7-T1 - Backend: Implementar DELETE /api/nominas/{id} | 0.5d | 259 | Desarrollador Backend | 4h |
| 264 | 8.7.2 | E6-HU7-T2 - QA: Pruebas de eliminación e integridad de nómina | 0.5d | 261 | QA / Tester | 4h |
| 265 | 8.8 | **E6-HU8 - Registrar pago a un trabajador** |  |  |  |  |
| 266 | 8.8.1 | E6-HU8-T1 - Backend: Implementar POST /api/pagos (PagoController, PagoService) | 2d | 263 | Desarrollador Backend | 16h |
| 267 | 8.8.2 | E6-HU8-T2 - Frontend: Habilitar registro de pago desde list-payment | 2d | 260 | Desarrollador Frontend | 16h |
| 268 | 8.8.3 | E6-HU8-T3 - QA: Pruebas PagoServiceTest | 2d | 264 | QA / Tester | 16h |
| 269 | 8.9 | **E6-HU9 - Consultar pagos (listado, detalle y por trabajador)** |  |  |  |  |
| 270 | 8.9.1 | E6-HU9-T1 - Backend: Implementar GET /api/pagos, /{id} y /trabajador/{trabajadorId} | 1d | 266 | Desarrollador Backend | 8h |
| 271 | 8.9.2 | E6-HU9-T2 - Frontend: Construir vista list-payment | 1d | 267 | Desarrollador Frontend | 8h |
| 272 | 8.9.3 | E6-HU9-T3 - QA: Pruebas PagoControllerTest y list-payment.spec.ts | 1d | 268 | QA / Tester | 8h |
| 273 | 9 | **E8 - Clima y Panel Principal** |  |  |  |  |
| 274 | 9.1 | **E8-HU1 - Consultar clima actual por coordenadas** |  |  |  |  |
| 275 | 9.1.1 | E8-HU1-T1 - Backend: Implementar GET /api/v1/weather/coordinates (WeatherController, WeatherService, OpenWeatherAdapter) | 1d | 270 | Desarrollador Backend | 8h |
| 276 | 9.1.2 | E8-HU1-T2 - Backend: Manejar errores de la API externa (ExternalApiException) | 1d | 275 | Desarrollador Backend | 8h |
| 277 | 9.1.3 | E8-HU1-T3 - QA: Pruebas WeatherServiceTest y OpenWeatherAdapterTest | 1d | 272 | QA / Tester | 8h |

Notes:
- 273: Consulta del clima para la finca y panel/dashboard de navegación general de la aplicación.

| ID | WBS | Task | Duration | Predecessors | Resources | Work |
| --- | --- | --- | --- | --- | --- | --- |
| 278 | 9.2 | **E8-HU2 - Consultar clima actual por nombre de ciudad** |  |  |  |  |
| 279 | 9.2.1 | E8-HU2-T1 - Backend: Implementar GET /api/v1/weather/city | 0.5d | 276 | Desarrollador Backend | 4h |
| 280 | 9.2.2 | E8-HU2-T2 - QA: Pruebas WeatherControllerTest para consulta por ciudad | 0.5d | 277 | QA / Tester | 4h |
| 281 | 9.3 | **E8-HU3 - Mostrar widget de clima en el panel principal** |  |  |  |  |
| 282 | 9.3.1 | E8-HU3-T1 - Frontend: Construir weather-widget.component consumiendo weather.service.ts | 1d | 271 | Desarrollador Frontend | 8h |
| 283 | 9.3.2 | E8-HU3-T2 - Frontend: Integrar weather-widget en el dashboard | 1d | 282 | Desarrollador Frontend | 8h |
| 284 | 9.3.3 | E8-HU3-T3 - QA: Pruebas weather.service.spec.ts | 1d | 280 | QA / Tester | 8h |
| 285 | 9.4 | **E8-HU4 - Panel principal (dashboard) con resumen de la operación** |  |  |  |  |
| 286 | 9.4.1 | E8-HU4-T1 - Frontend: Construir dashboard.html/ts con los indicadores/resúmenes principales | 2d | 283 | Desarrollador Frontend | 16h |
| 287 | 9.4.2 | E8-HU4-T2 - Frontend: Configurar app.routes.ts para redirigir al dashboard tras login | 2d | 286 | Desarrollador Frontend | 16h |
| 288 | 9.4.3 | E8-HU4-T3 - QA: Pruebas dashboard.spec.ts | 2d | 284 | QA / Tester | 16h |
| 289 | 9.5 | **E8-HU5 - Navegación general de la aplicación** |  |  |  |  |
| 290 | 9.5.1 | E8-HU5-T1 - Frontend: Construir layout.html/ts con menú de navegación | 1d | 287 | Desarrollador Frontend | 8h |
| 291 | 9.5.2 | E8-HU5-T2 - Frontend: Integrar layout como contenedor de rutas protegidas en app.routes.ts | 1d | 290 | Desarrollador Frontend | 8h |
| 292 | 9.5.3 | E8-HU5-T3 - QA: Pruebas de navegación general | 1d | 288 | QA / Tester | 8h |
